# 甘特图1.2V

Schedule from MS Project, 2018-09-19 to 2019-01-16, 2 hours a day, A marks actual dates.

## Calendars

- Standard: Mon-Fri 08:00-12:00, 13:00-17:00; Sat-Sun off. Exceptions (off unless hours are given): 2018-09-19 to 2019-01-14 08:00-12:00, 13:00-17:00 (工作日).
- Calendar 1: Mon-Fri 08:00-12:00, 13:00-17:00; Sat-Sun off. Exceptions (off unless hours are given): 2018-09-19 to 2019-01-13 17:00-18:00, 19:00-20:00 (working, recurring), 2018-10-01 to 2018-10-07 (国庆节), 2019-01-13 10:00-12:00, 17:00-20:00 (team building).
- 需求项目工程: Mon-Fri 08:00-12:00, 13:00-17:00; Sat-Sun off. Exceptions (off unless hours are given): 2018-09-19 to 2019-01-13 17:00-18:00, 19:00-20:00 (working, recurring), 2018-10-01 to 2018-10-07 (国庆节), 2019-01-13 08:00-12:00, 17:00-20:00 (team building).

## Resources

| Resource |
| --- |
| 刘向辉 |
| 左文正 |
| 陈祥斌 |
| 涂弘森 |
| 王安栋 |
| 杨枨 |
| 侯宏仑 |

## Schedule

| ID | WBS | Task | Type | Duration | Start | Finish | Predecessors | Complete | Remaining | Actual start | Actual finish | Constraint | Calendar | Resources | Work | Actual work | 总负责人 |
| --- | --- | --- | --- | --- | --- | --- | --- | --- | --- | --- | --- | --- | --- | --- | --- | --- | --- |
| 1 | 1 | **软件工程系列课程教学辅助网站** |  | 253h | 2018-09-19 08:00 A | 2019-01-16 14:00 |  | 47% | 134.83h |  |  |  | Calendar 1 | 左文正 [20%]; 陈祥斌 [20%]; 刘向辉 [20%]; 涂弘森 [20%]; 王安栋 [20%] | 717.44h | 172.97h | 刘向辉 |
| 2 | 1.1 | **项目前期准备** |  | 34h | 2018-09-19 08:00 | 2018-09-30 21:00 |  | 100% |  | 2018-09-21 17:00 | 2018-09-23 20:00 |  | Calendar 1 |  | 16h | 16h |  |
| 3 | 1.1.1 | 小组第一次会议（讨论项目选题和后期分配资源） | milestone, manual | 2h | 2018-09-21 17:00 A | 2018-09-21 20:00 A |  | 100% |  |  |  |  | Calendar 1 | 左文正; 陈祥斌; 刘向辉; 涂弘森; 王安栋 | 10h | 10h | 左文正 |
| 4 | 1.1.2 | 资源配置 | manual | 4h | 2018-09-22 17:00 A | 2018-09-23 20:00 A | 3 | 100% |  |  |  | start no earlier than 2018-09-22 17:00 | Calendar 1 | 陈祥斌 | 4h | 4h | 陈祥斌 |
| 5 | 1.1.3 | logo设计 | manual | 2h | 2018-09-22 17:00 A | 2018-09-22 20:00 A | 3 | 100% |  |  |  |  | Calendar 1 | 涂弘森 [25%]; 刘向辉 [75%] | 2h | 2h | 涂弘森 |
| 6 | 1.2 | **项目计划** |  | 97h | 2018-09-27 17:00 A | 2018-11-21 19:00 | 2 | 96% | 3.51h |  |  |  | Calendar 1 |  | 123h | 120h |  |
| 7 | 1.2.1 | 小组第二次会议 | manual | 1h | 2018-09-27 17:00 A | 2018-09-27 18:00 A | 3FS+10h | 100% |  |  |  |  | Calendar 1 | 左文正; 陈祥斌; 刘向辉; 涂弘森; 王安栋 | 5h | 5h | 左文正 |
| 8 | 1.2.2 | 第二次会议记录 | manual | 0.5h | 2018-09-28 08:00 A | 2018-09-28 08:30 A | 7 | 100% |  |  |  |  |  | 左文正 | 0.5h | 0.5h |  |
| 9 | 1.2.3 | 甘特图绘制V0.1 | manual | 4h | 2018-09-27 19:00 A | 2018-09-29 18:00 A | 7 | 100% |  |  |  |  | Calendar 1 | 王安栋 | 4h | 4h | 王安栋 |
| 10 | 1.2.4 | WBS绘制 | manual | 2h | 2018-09-29 17:00 A | 2018-09-29 20:00 A | 7FS+3h | 100% |  |  |  |  | Calendar 1 | 左文正 | 2h | 2h | 左文正 |
| 11 | 1.2.5 | OBS绘制 | manual | 1h | 2018-09-29 17:00 A | 2018-09-29 18:00 A | 7FS+3h | 100% |  |  |  |  | Calendar 1 | 陈祥斌 | 1h | 1h | 陈祥斌 |
| 12 | 1.2.6 | 需求项目计划V0.1 | manual | 5h | 2018-09-30 17:00 A | 2018-10-09 18:00 | 7FS+5h | 40% | 3h |  |  |  | Calendar 1 | 左文正 [20%]; 陈祥斌 [20%]; 刘向辉 [20%]; 涂弘森 [20%]; 王安栋 [20%] | 5h | 2h | 刘向辉 |
| 13 | 1.2.7 | 需求项目计划PPT制作0.1 | manual | 1h | 2018-09-30 17:00 A | 2018-09-30 18:00 A | 12FS-2h | 100% |  |  |  |  | Calendar 1 | 左文正 | 1h | 1h |  |
| 14 | 1.2.8 | 小组第三次会议 | manual | 1h | 2018-10-12 19:00 A | 2018-10-12 20:00 A | 7FS+30h | 100% |  |  |  |  | Calendar 1 | 左文正; 陈祥斌; 刘向辉; 涂弘森; 王安栋 | 5h | 5h | 左文正 |
| 15 | 1.2.9 | 第三次会议记录 | manual | 0.5h | 2018-10-12 16:00 A | 2018-10-12 16:30 A | 14SS-1h | 100% |  |  |  |  |  | 左文正 | 0.5h | 0.5h |  |
| 16 | 1.2.10 | 方案设计（模板） | manual | 2h | 2018-10-12 19:00 A | 2018-10-13 18:00 A | 14FS-1h | 100% |  |  |  |  | Calendar 1 | 涂弘森 | 2h | 2h | 涂弘森 |
| 17 | 1.2.11 | 可行性分析报告V0.1 | milestone, manual | 2h | 2018-10-13 17:00 A | 2018-10-13 20:00 A | 14 | 100% |  |  |  |  | Calendar 1 | 王安栋 [50%]; 涂弘森 [50%] | 2h | 2h | 涂弘森 |
| 18 | 1.2.12 | 甘特图完善V0.2 | manual | 2h | 2018-10-13 17:00 A | 2018-10-13 20:00 A | 9FS+27h | 100% |  |  |  |  | Calendar 1 | 王安栋 | 2h | 2h | 王安栋 |
| 19 | 1.2.13 | 需求工程项目计划V0.2 | manual | 2h | 2018-10-13 17:00 A | 2018-10-13 20:00 A | 12FS+22h | 100% |  |  |  |  | Calendar 1 | 左文正 [50%]; 刘向辉 [50%] | 2h | 2h | 左文正 |
| 20 | 1.2.14 | 小组第四次会议 | manual | 1h | 2018-10-17 19:00 A | 2018-10-17 20:00 A | 14FS+9h | 100% |  |  |  |  | Calendar 1 | 左文正; 陈祥斌; 刘向辉; 涂弘森; 王安栋 | 5h | 5h | 左文正 |
| 21 | 1.2.15 | 第四次会议记录 | manual | 0.5h | 2018-10-18 08:00 A | 2018-10-18 08:30 A | 20 | 100% |  |  |  |  |  | 左文正 | 0.5h | 0.5h |  |
| 22 | 1.2.16 | 需求项目计划完善V1.0 | manual | 2h | 2018-10-17 19:00 A | 2018-10-18 18:00 A | 19FS+9h | 100% |  |  |  |  | Calendar 1 | 刘向辉 | 2h | 2h | 刘向辉 |
| 23 | 1.2.17 | WBS、OBS修改0.2 | manual | 3h | 2018-10-18 17:00 A | 2018-10-19 18:00 A | 10FS+36h | 100% |  |  |  |  | Calendar 1 | 左文正 [50%]; 刘向辉 [50%] | 3h | 3h | 左文正 |
| 24 | 1.2.18 | 甘特图完善1.1 | manual | 2.5h | 2018-10-18 17:00 A | 2018-10-19 17:30 A | 19FS+10h | 100% |  |  |  |  | Calendar 1 | 王安栋 | 2.5h | 2.5h |  |
| 25 | 1.2.19 | 小组第五次会议 | manual | 1h | 2018-10-19 17:00 A | 2018-10-19 18:00 A | 20FS+2h | 100% |  |  |  |  | Calendar 1 | 左文正; 陈祥斌; 刘向辉; 涂弘森; 王安栋 | 5h | 5h | 左文正 |
| 26 | 1.2.20 | 第五次会议记录 | manual | 0.5h | 2018-10-19 16:00 A | 2018-10-19 16:30 A | 25FS-1h | 100% |  |  |  |  |  | 左文正 | 0.5h | 0.5h |  |
| 27 | 1.2.21 | 项目章程 | milestone, manual | 3h | 2018-10-20 17:00 A | 2018-10-21 18:00 A | 25FS+1h | 100% |  |  |  |  | Calendar 1 | 涂弘森 | 3h | 3h | 涂弘森 |
| 28 | 1.2.22 | 项目总体计划 | milestone, manual | 1.5h | 2018-10-20 19:00 A | 2018-10-21 17:30 A | 25FS+2h | 100% |  |  |  |  | Calendar 1 | 王安栋 | 1.5h | 1.5h | 王安栋 |
| 29 | 1.2.23 | 甘特图完善1.2 | manual | 1.5h | 2018-10-20 17:30 A | 2018-10-20 20:00 A | 24FS+2h | 100% |  |  |  |  | Calendar 1 | 王安栋 | 1.5h | 1.5h |  |
| 30 | 1.2.24 | 需求工程项目计划—初步0.3 | milestone, manual | 2h | 2018-10-21 17:00 A | 2018-10-21 19:00 A | 19FS+50h | 100% |  |  |  |  |  | 刘向辉 | 2h | 2h |  |
| 31 | 1.2.25 | 小组第六次会议 | manual | 1h | 2018-10-26 19:00 A | 2018-10-26 20:00 A | 25FS+14h | 100% |  |  |  |  | Calendar 1 | 左文正; 陈祥斌; 刘向辉; 涂弘森; 王安栋 | 5h | 5h | 左文正 |
| 32 | 1.2.26 | 第六次会议记录 | manual | 0.5h | 2018-10-26 16:00 A | 2018-10-26 16:30 A | 31FS-1h | 100% |  |  |  |  |  | 左文正 | 0.5h | 0.5h |  |
| 33 | 1.2.27 | 需求工程项目报告1.0和需求项目答辩ppt0.2 | manual | 3h | 2018-10-28 08:00 A | 2018-10-28 11:00 A | 30 | 100% |  |  |  |  |  | 刘向辉 | 3h | 3h |  |
| 34 | 1.2.28 | QA计划 | milestone, manual | 4h | 2018-10-27 17:00 A | 2018-10-28 12:00 A | 31FS+4h | 100% |  |  |  |  |  | 涂弘森 | 4h | 4h |  |
| 35 | 1.2.29 | 甘特图完善1.3 | manual | 2h | 2018-10-27 17:00 A | 2018-10-28 10:00 A | 29FS+30h | 100% |  |  |  |  |  | 王安栋 | 2h | 2h |  |
| 36 | 1.2.30 | 甘特图1.4 | manual | 1.5h | 2018-10-28 15:00 A | 2018-10-28 16:30 A | 35FS+4h | 100% |  |  |  |  |  | 王安栋 | 1.5h | 1.5h |  |
| 37 | 1.2.31 | 小组第七次会议 | milestone, manual | 1h | 2018-10-31 17:00 A | 2018-10-31 18:00 A | 31FS+8h | 100% |  |  |  |  | Calendar 1 | 左文正; 陈祥斌; 刘向辉; 涂弘森; 王安栋 | 5h | 5h | 左文正 |
| 38 | 1.2.32 | 第七次会议记录 | manual | 0.5h | 2018-10-31 17:00 A | 2018-11-01 08:30 A | 37FS-1h | 100% |  |  |  |  |  | 左文正 | 0.5h | 0.5h |  |
| 39 | 1.2.33 | 经济可行性报告0.2 | manual | 1d | 2018-11-01 17:00 A | 2018-11-01 19:00 A | 17 | 100% |  |  |  |  |  | 涂弘森 | 2h | 2h |  |
| 40 | 1.2.34 | 需求工程项目报告1.1 | manual | 1d | 2018-10-29 14:00 A | 2018-10-29 16:00 A | 33FS+10h | 100% |  |  |  |  |  | 刘向辉 | 2h | 2h |  |
| 41 | 1.2.35 | 甘特图1.5 | manual | 1h | 2018-11-06 17:00 A | 2018-11-06 18:00 A | 36FS+12h | 100% |  |  |  |  |  | 王安栋 | 1h | 1h |  |
| 42 | 1.2.36 | 第八次会议 | milestone, manual | 2h | 2018-11-09 17:00 A | 2018-11-09 19:00 A | 37FS+14h | 100% |  |  |  |  |  | 左文正; 陈祥斌; 刘向辉; 涂弘森; 王安栋 | 10h | 10h |  |
| 43 | 1.2.37 | 第八次会议记录 | manual | 0.5h | 2018-11-09 17:00 A | 2018-11-09 17:30 A | 42FS-1h | 100% |  |  |  |  |  | 左文正 | 0.5h | 0.5h |  |
| 44 | 1.2.38 | 需求工程项目报告1.2引言-需求工程计划（1-6） | manual | 2h | 2018-11-10 17:00 A | 2018-11-10 19:00 A | 40FS+18h | 100% |  |  |  |  |  | 王安栋 | 2h | 2h |  |
| 45 | 1.2.39 | 需求工程项目报告1.2质量管理计划、沟通管理计划（7-8） | manual | 1d | 2018-11-10 17:00 A | 2018-11-10 19:00 A | 40FS+18h | 100% |  |  |  |  |  | 涂弘森 | 2h | 2h |  |
| 46 | 1.2.40 | 需求工程项目报告1.2成本管理计划、项目范围计划（9-10） | manual | 1d | 2018-11-10 17:00 A | 2018-11-10 19:00 A | 40FS+18h | 100% |  |  |  |  |  | 左文正 | 2h | 2h |  |
| 47 | 1.2.41 | 需求工程项目报告1.2配置管理计划、项目时间计划（11-12） | manual | 1d | 2018-11-10 17:00 A | 2018-11-10 19:00 A | 40FS+18h | 100% |  |  |  |  |  | 陈祥斌 | 2h | 2h |  |
| 48 | 1.2.42 | 需求工程项目报告1.2人力资源计划、风险管理计划（13-14） | manual | 1d | 2018-11-01 09:00 A | 2018-11-01 11:00 A | 40FS+18h | 100% |  |  |  |  |  | 刘向辉 | 2h | 2h |  |
| 49 | 1.2.43 | 第九次会议 | milestone, manual | 2h | 2018-11-16 17:00 A | 2018-11-16 19:00 A | 42FS+14h | 100% |  |  |  |  |  | 左文正; 陈祥斌; 刘向辉; 涂弘森; 王安栋 | 10h | 10h |  |
| 50 | 1.2.44 | 第九次会议记录 | manual | 0.5h | 2018-11-16 17:00 A | 2018-11-16 17:30 A | 49FS-1h | 100% |  |  |  |  |  | 左文正 | 0.5h | 0.5h |  |
| 51 | 1.2.45 | 需求工程项目报告1.3 | milestone, manual | 2h | 2018-11-18 08:00 A | 2018-11-18 10:00 A | 48FS+133h | 100% |  |  |  |  |  | 左文正 [20%]; 陈祥斌 [20%]; 刘向辉 [20%]; 涂弘森 [20%]; 王安栋 [20%] | 2h | 2h |  |
| 52 | 1.2.46 | 需求工程项目答辩PPT0.3 | manual | 2h | 2018-11-18 15:00 A | 2018-11-18 17:00 A | 51FS-2h | 100% |  |  |  |  |  | 左文正 [20%]; 陈祥斌 [20%]; 刘向辉 [20%]; 涂弘森 [20%]; 王安栋 [20%] | 2h | 2h |  |
| 53 | 1.2.47 | 甘特图1.6 | manual | 3h | 2018-11-21 17:00 A | 2018-11-22 11:00 A | 41 | 100% |  |  |  |  |  | 王安栋 | 3h | 3h |  |

| ID | WBS | Task | Type | Duration | Start | Finish | Predecessors | Complete | Remaining | Actual start | Calendar | Resources | Work | Actual work | 总负责人 |
| --- | --- | --- | --- | --- | --- | --- | --- | --- | --- | --- | --- | --- | --- | --- | --- |
| 54 | 1.3 | **项目工程** |  | 73h | 2018-11-19 17:00 | 2018-12-25 19:00 | 6 | 2% | 71.82h | 2018-11-07 17:00 | Calendar 1 |  | 147h | 5h |  |
| 55 | 1.3.1 | **需求获取** |  | 67h | 2018-11-22 17:00 A | 2018-12-25 19:00 |  | 4% | 64.47h |  | Calendar 1 |  | 82.5h | 5h |  |
| 56 | 1.3.1.1 | 项目下达者需求访谈 | manual | 2h | 2018-11-22 17:00 | 2018-11-22 19:00 |  |  |  |  |  | 左文正; 陈祥斌; 刘向辉; 涂弘森; 王安栋 | 10h |  |  |
| 57 | 1.3.1.2 | 小组第十次会议 | manual | 1h | 2018-11-23 16:00 | 2018-11-23 17:00 | 51FS+45h |  |  |  |  | 左文正; 陈祥斌; 刘向辉; 涂弘森; 王安栋 | 5h |  |  |
| 58 | 1.3.1.3 | 第十次会议记录 | manual | 0.5h | 2018-11-23 16:00 | 2018-11-23 16:30 | 57FS-1h |  |  |  |  | 左文正 | 0.5h |  |  |
| 59 | 1.3.1.4 | 检查用户问题报告 | manual | 2h | 2018-11-24 17:00 | 2018-11-24 20:00 |  |  |  |  | Calendar 1 | 刘向辉 | 2h |  | 刘向辉 |
| 60 | 1.3.1.5 | 需求愿景 | manual | 2h | 2018-11-23 08:00 | 2018-11-23 10:00 | 56 |  |  |  |  | 涂弘森 | 2h |  |  |
| 61 | 1.3.1.6 | 关联图 | manual | 2h | 2018-11-24 08:00 | 2018-11-24 10:00 | 57 |  |  |  |  | 王安栋 [70%]; 涂弘森 [30%] | 2h |  |  |
| 62 | 1.3.1.7 | 生态系统图 | manual | 2h | 2018-11-24 17:00 | 2018-11-24 20:00 | 57FS+2h |  |  |  | Calendar 1 | 刘向辉 [30%]; 陈祥斌 [70%] | 2h |  | 刘向辉 |
| 63 | 1.3.1.8 | 特性树 | manual | 2h | 2018-11-24 10:00 | 2018-11-24 12:00 | 57FS+2h |  |  |  |  | 左文正 [70%]; 刘向辉 [30%] | 2h |  |  |
| 64 | 1.3.1.9 | 界面原型 | manual | 5h | 2018-11-24 13:00 | 2018-11-25 09:00 | 61 |  |  |  |  | 王安栋; 刘向辉; 左文正; 陈祥斌; 涂弘森 | 25h |  |  |
| 65 | 1.3.1.10 | **用户代表访谈** |  | 18h | 2018-11-26 17:00 A | 2018-11-29 10:00 |  | 13% | 15.75h |  |  |  | 32h | 5h |  |
| 66 | 1.3.1.10.1 | 学生用户代表访谈 | manual | 1h | 2018-11-26 17:00 | 2018-11-26 18:00 | 59SF |  |  |  | Calendar 1 | 陈祥斌; 刘向辉; 左文正; 涂弘森; 王安栋 | 5h |  | 陈祥斌 |
| 67 | 1.3.1.10.2 | 游客用户代表访谈 | manual | 1h | 2018-11-27 17:00 | 2018-11-27 18:00 | 59SF |  |  |  | Calendar 1 | 王安栋; 刘向辉; 左文正; 陈祥斌; 涂弘森 | 5h |  | 王安栋 |
| 68 | 1.3.1.10.3 | 管理员用户代表访谈 | manual | 1h | 2018-11-28 17:00 | 2018-11-28 18:00 | 59SF |  |  |  | Calendar 1 | 涂弘森; 刘向辉; 左文正; 陈祥斌; 王安栋 | 5h |  | 刘向辉 |
| 69 | 1.3.1.10.4 | 教师用户代表访谈 | manual | 1h | 2018-11-29 17:00 A | 2018-11-29 18:00 A | 59SF | 100% |  |  | Calendar 1 | 刘向辉; 左文正; 陈祥斌; 涂弘森; 王安栋 | 5h | 5h | 左文正 |
| 70 | 1.3.1.10.5 | 调查问卷设计及分发 | manual | 2h | 2018-11-30 17:00 | 2018-11-30 19:00 | 71SF |  |  |  |  | 刘向辉; 左文正; 陈祥斌; 涂弘森; 王安栋 | 10h |  |  |
| 71 | 1.3.1.10.6 | 完善已有的需求 | manual | 2h | 2018-12-01 17:00 | 2018-12-01 20:00 | 59 |  |  |  | Calendar 1 | 左文正 | 2h |  | 陈祥斌 |
| 72 | 1.3.2 | **需求分析** |  | 21h | 2018-11-24 17:00 | 2018-12-04 19:00 | 55 |  |  |  | Calendar 1 |  | 23h |  |  |
| 73 | 1.3.2.1 | 设计流程图 | manual | 4h | 2018-11-26 17:00 | 2018-11-27 20:00 | 57FS+5h |  |  |  | Calendar 1 | 王安栋 [50%]; 涂弘森 [50%] | 4h |  | 涂弘森 |
| 74 | 1.3.2.2 | 分析可实现性 | manual | 1.5h | 2018-11-27 17:00 | 2018-11-27 19:30 | 57FS+7h |  |  |  | Calendar 1 | 左文正 | 1.5h |  | 左文正 |
| 75 | 1.3.2.3 | 排列需求优先级 | manual | 1h | 2018-11-27 17:00 | 2018-11-27 18:00 | 57FS+8h |  |  |  | Calendar 1 | 陈祥斌 [50%]; 左文正 [50%] | 1h |  | 刘向辉 |
| 76 | 1.3.2.4 | 小组第十一次会议 | milestone, manual | 1h | 2018-11-30 10:00 | 2018-11-30 11:00 | 57FS+50h |  |  |  |  | 左文正; 陈祥斌; 刘向辉; 涂弘森; 王安栋 | 5h |  |  |
| 77 | 1.3.2.5 | 第十一次会议记录 | manual | 0.5h | 2018-11-30 10:00 | 2018-11-30 10:30 | 76FS-1h |  |  |  |  | 左文正 | 0.5h |  |  |
| 78 | 1.3.2.6 | 创建数据字典和ER图 | manual | 4h | 2018-11-30 17:00 | 2018-12-01 20:00 | 76 |  |  |  | Calendar 1 | 涂弘森 [50%]; 王安栋 [50%] | 4h |  | 涂弘森 |
| 79 | 1.3.2.7 | 需求分析计划 | manual | 4h | 2018-12-02 17:00 | 2018-12-03 20:00 | 78 |  |  |  | Calendar 1 | 陈祥斌 | 4h |  | 陈祥斌 |
| 80 | 1.3.2.8 | 分析接口 | manual | 2h | 2018-12-02 17:00 | 2018-12-02 20:00 | 76FS+4h |  |  |  | Calendar 1 | 涂弘森 | 2h |  | 涂弘森 |
| 81 | 1.3.2.9 | 将需求分配到子系统 | manual | 1h | 2018-12-02 17:00 | 2018-12-02 18:00 | 76FS+4h |  |  |  | Calendar 1 | 陈祥斌 [30%]; 刘向辉 [30%]; 王安栋 [40%] | 1h |  | 左文正 |

| ID | WBS | Task | Type | Duration | Start | Finish | Predecessors | Total slack | Calendar | Resources | Work | 总负责人 |
| --- | --- | --- | --- | --- | --- | --- | --- | --- | --- | --- | --- | --- |
| 82 | 1.3.3 | **需求验证** |  | 15h | 2018-12-03 17:00 | 2018-12-10 19:00 | 72 |  | Calendar 1 |  | 41.5h |  |
| 83 | 1.3.3.1 | 评审需求 | manual | 3h | 2018-12-03 17:00 | 2018-12-04 20:00 |  |  | Calendar 1 | 涂弘森 [50%]; 刘向辉 [50%] | 16h | 王安栋 |
| 84 | 1.3.3.2 | 测试需求 | manual | 2h | 2018-12-04 17:00 | 2018-12-04 20:00 |  |  | Calendar 1 | 王安栋 | 2h | 涂弘森 |
| 85 | 1.3.3.3 | 小组第十二次会议 | milestone, manual | 1h | 2018-12-07 17:00 | 2018-12-07 18:00 | 76FS+14h |  | Calendar 1 | 左文正; 陈祥斌; 刘向辉; 涂弘森; 王安栋 | 5h | 左文正 |
| 86 | 1.3.3.4 | 第十二次会议记录 | manual | 0.5h | 2018-12-07 17:00 | 2018-12-07 17:30 | 85FS-1h |  |  | 左文正 | 0.5h |  |
| 87 | 1.3.3.5 | 定义验收条件 | manual | 2h | 2018-11-07 17:00 | 2018-11-07 20:00 |  |  | Calendar 1 | 刘向辉 | 2h | 刘向辉 |
| 88 | 1.3.3.6 | 模拟需求 | manual | 1h | 2018-12-07 17:00 | 2018-12-07 18:00 |  |  | Calendar 1 | 左文正 | 1h | 左文正 |
| 89 | 1.3.3.7 | 第二次访谈 | manual | 1d | 2018-12-07 17:00 | 2018-12-07 19:00 |  |  |  | 左文正; 陈祥斌; 刘向辉; 涂弘森; 王安栋 | 10h |  |
| 90 | 1.3.3.8 | 软件需求规格说明书 | milestone, manual | 3h | 2018-12-07 19:00 | 2018-12-08 20:00 | 83, 84, 89, 87, 88 |  | Calendar 1 | 陈祥斌 | 3h | 陈祥斌 |
| 91 | 1.3.3.9 | 软件需求规格说明书修改 | manual | 2h | 2018-12-09 17:00 | 2018-12-09 20:00 | 90 |  | Calendar 1 | 左文正 [20%]; 陈祥斌 [20%]; 刘向辉 [20%]; 涂弘森 [20%]; 王安栋 [20%] | 2h |  |
| 92 | 1.4 | **项目控制** |  | 41h | 2018-12-11 17:00 | 2018-12-31 19:00 | 54 |  | Calendar 1 |  | 56.97h |  |
| 93 | 1.4.1 | **需求管理** |  | 38h | 2018-12-11 08:00 | 2018-12-25 19:00 | 82 |  | Calendar 1 |  | 29.5h |  |
| 94 | 1.4.1.1 | 建立基线、管理需求版本 | manual | 3h | 2018-12-12 17:00 | 2018-12-13 18:00 |  |  | Calendar 1 | 陈祥斌 | 3h | 陈祥斌 |
| 95 | 1.4.1.2 | 分析变更影响 | manual | 2h | 2018-12-13 19:00 | 2018-12-14 18:00 | 94 |  | Calendar 1 | 王安栋 | 2h | 王安栋 |
| 96 | 1.4.1.3 | 小组第十三次会议 | milestone, manual | 1h | 2018-12-14 19:00 | 2018-12-14 20:00 | 85FS+14h |  | Calendar 1 | 左文正; 陈祥斌; 刘向辉; 涂弘森; 王安栋 | 5h | 左文正 |
| 97 | 1.4.1.4 | 第十三次会议记录 | manual | 0.5h | 2018-12-14 16:00 | 2018-12-14 16:30 | 96FS-1h |  |  | 左文正 | 0.5h |  |
| 98 | 1.4.1.5 | 维护变更历史 | manual | 2h | 2018-12-14 19:30 | 2018-12-15 19:30 | 95 |  | Calendar 1 | 刘向辉 | 2h | 刘向辉 |
| 99 | 1.4.1.6 | 跟踪需求状态 | manual | 2.5h | 2018-12-15 19:30 | 2018-12-16 20:00 | 98 |  | Calendar 1 | 左文正 | 2.5h | 左文正 |
| 100 | 1.4.1.7 | 跟踪需求问题 | manual | 3h | 2018-12-17 17:00 | 2018-12-18 18:00 | 99 |  | Calendar 1 | 刘向辉 | 3h | 刘向辉 |
| 101 | 1.4.1.8 | 软件需求变更文档 | manual | 2h | 2018-12-20 17:00 | 2018-12-20 20:00 |  |  | Calendar 1 | 陈祥斌 | 3h | 左文正 |
| 102 | 1.4.1.9 | 小组第十四次会议 | milestone, manual | 1h | 2018-12-21 19:00 | 2018-12-21 20:00 | 96FS+13h |  | Calendar 1 | 左文正; 陈祥斌; 刘向辉; 涂弘森; 王安栋 | 5h | 左文正 |
| 103 | 1.4.1.10 | 第十四次会议记录 | manual | 0.5h | 2018-12-21 16:00 | 2018-12-21 16:30 | 102FS-1h |  |  | 左文正 | 0.5h |  |
| 104 | 1.4.1.11 | 软件需求变更文档修改 |  | 3h | 2018-12-23 19:00 | 2018-12-24 20:00 | 101FS+5h | 7d | Calendar 1 | 王安栋 [50%]; 涂弘森 [50%] | 3h | 王安栋 |
| 105 | 1.4.2 | 方案选择及前期文档的整理 | manual | 2h | 2018-12-26 08:00 | 2018-12-26 10:00 |  |  | Calendar 1 | 刘向辉 | 2h | 刘向辉 |
| 106 | 1.4.3 | 功能分解（IPO图）绘制 | manual | 3h | 2018-12-26 08:00 | 2018-12-26 11:00 |  |  | Calendar 1 | 涂弘森 [50%]; 王安栋 [50%] | 3h | 涂弘森 |
| 107 | 1.4.4 | 软件结构设计 | manual | 3h | 2018-12-27 08:00 | 2018-12-27 11:00 |  |  | Calendar 1 | 左文正 | 3h | 左文正 |
| 108 | 1.4.5 | 小组第十五次会议 | milestone, manual | 1h | 2018-12-28 19:00 | 2018-12-28 20:00 | 102FS+13h |  | Calendar 1 | 左文正; 陈祥斌; 刘向辉; 涂弘森; 王安栋 | 5h | 左文正 |
| 109 | 1.4.6 | 第十五次会议记录 | manual | 0.5h | 2018-12-28 16:00 | 2018-12-28 16:30 | 108FS-1h |  |  | 左文正 | 0.5h |  |
| 110 | 1.4.7 | 数据库设计 | manual | 3h | 2018-12-29 17:00 | 2018-12-30 19:00 |  |  | Calendar 1 | 陈祥斌 | 3h | 陈祥斌 |
| 111 | 1.4.8 | 系统设计与实现计划 | manual | 3h | 2018-12-29 08:00 | 2018-12-29 11:00 |  |  | Calendar 1 | 王安栋 [33%]; 涂弘森 [33%]; 陈祥斌 [33%] | 2.97h | 刘向辉 |
| 112 | 1.4.9 | 软件概要设计说明--初步 | milestone, manual | 4h | 2018-12-27 17:00 | 2018-12-29 17:00 | 105SF, 106SF, 107SF, 110SF, 111SF |  | Calendar 1 | 左文正 [20%]; 陈祥斌 [20%]; 刘向辉 [20%]; 涂弘森 [20%]; 王安栋 [20%] | 4h |  |
| 113 | 1.4.10 | 软件概要设计说明--修改 | manual | 4h | 2018-12-29 17:00 | 2018-12-30 10:00 | 112 |  | Calendar 1 | 左文正 [20%]; 陈祥斌 [20%]; 刘向辉 [20%]; 涂弘森 [20%]; 王安栋 [20%] | 4h |  |

| ID | WBS | Task | Type | Duration | Start | Finish | Predecessors | Complete | Calendar | Resources | Work | Actual work | 总负责人 |
| --- | --- | --- | --- | --- | --- | --- | --- | --- | --- | --- | --- | --- | --- |
| 114 | 1.5 | **项目收尾** |  | 28h | 2019-01-01 17:00 | 2019-01-13 19:00 | 92 |  | Calendar 1 |  | 89.5h |  |  |
| 115 | 1.5.1 | 项目检验 | manual | 7h | 2019-01-01 17:00 | 2019-01-04 18:00 |  |  | Calendar 1 | 左文正 [20%]; 陈祥斌 [20%]; 刘向辉 [20%]; 涂弘森 [20%]; 王安栋 [20%] | 9h |  | 刘向辉 |
| 116 | 1.5.2 | 小组第十六次会议 | manual | 1h | 2019-01-04 19:00 | 2019-01-04 20:00 | 108FS+13h |  | Calendar 1 | 左文正; 陈祥斌; 刘向辉; 涂弘森; 王安栋 | 5h |  | 左文正 |
| 117 | 1.5.3 | 第十六次会议记录 | manual | 0.5h | 2019-01-04 16:00 | 2019-01-04 16:30 | 116FS-1h |  |  | 左文正 | 0.5h |  |  |
| 118 | 1.5.4 | 项目修改 | manual | 11h | 2019-01-05 19:00 | 2019-01-10 20:00 | 115FS+2h |  | Calendar 1 | 左文正; 陈祥斌; 刘向辉; 涂弘森; 王安栋 | 55h |  | 刘向辉 |
| 119 | 1.5.5 | 小组第十七次会议 | milestone, manual | 0h | 2019-01-11 17:00 | 2019-01-11 17:00 | 116FS+13h |  | Calendar 1 | 左文正; 陈祥斌; 刘向辉; 涂弘森; 王安栋 |  |  | 左文正 |
| 120 | 1.5.6 | 第十七次会议记录 | manual | 0.5h | 2019-01-11 16:00 | 2019-01-11 16:30 | 119FS-1h |  |  | 左文正 | 0.5h |  |  |
| 121 | 1.5.7 | 项目审核 | milestone, manual | 2h | 2019-01-12 17:00 | 2019-01-12 20:00 |  |  | Calendar 1 | 杨枨 [50%]; 侯宏仑 [50%] | 2h |  |  |
| 122 | 1.5.8 | 项目提交 | milestone, manual | 0.5h | 2019-01-13 08:00 | 2019-01-13 08:30 | 121 |  |  | 刘向辉; 左文正; 陈祥斌; 涂弘森; 王安栋 | 2.5h |  |  |
| 123 | 1.5.9 | team building | manual | 3h | 2019-01-13 08:30 | 2019-01-13 11:30 | 122 |  | 需求项目工程 | 刘向辉; 左文正; 陈祥斌; 涂弘森; 王安栋 | 15h |  |  |
| 125 | 1.6 | **UMLPPT制作** |  | 109d | 2018-10-12 17:00 A | 2018-11-08 19:00 A |  | 100% |  |  | 31.97h | 31.97h |  |
| 126 | 1.6.1 | uml概述PPT | manual | 3h | 2018-10-12 17:00 A | 2018-10-13 18:00 A | 14 | 100% | Calendar 1 | 左文正 [33%]; 刘向辉 [33%]; 陈祥斌 [33%] | 2.97h | 2.97h |  |
| 127 | 1.6.2 | uml概述PPT | manual | 1d | 2018-10-16 17:00 A | 2018-10-17 10:00 A | 126 | 100% |  | 刘向辉 [50%]; 陈祥斌 [50%] | 4h | 4h |  |
| 128 | 1.6.3 | uml工具PPT0.1 | manual | 6h | 2018-10-20 08:00 A | 2018-10-20 15:00 A |  | 100% |  | 左文正 [50%]; 陈祥斌 [50%] | 6h | 6h |  |
| 129 | 1.6.4 | uml工具PPT修改0.2 | manual | 2h | 2018-10-27 17:00 A | 2018-10-28 10:00 A | 128FS+16h | 100% |  | 王安栋 | 2h | 2h |  |
| 130 | 1.6.5 | uml基础1ppt0.1 | manual | 6h | 2018-10-27 17:00 A | 2018-10-28 15:00 A | 31FS+3h | 100% |  | 左文正 [50%]; 陈祥斌 [50%] | 6h | 6h |  |
| 131 | 1.6.6 | uml基础1ppt完善0.2 | manual | 2h | 2018-11-02 17:00 A | 2018-11-03 10:00 A | 130FS+14h | 100% |  | 陈祥斌; 左文正 | 4h | 4h |  |
| 132 | 1.6.7 | uml基础2PPT0.1 | manual | 5h | 2018-11-03 17:00 A | 2018-11-04 14:00 A | 37FS+2h | 100% |  | 涂弘森 [20%]; 左文正 [20%]; 陈祥斌 [20%]; 刘向辉 [20%]; 王安栋 [20%] | 5h | 5h |  |
| 133 | 1.6.8 | uml基础2PPT修改0.2 | manual | 2h | 2018-11-08 17:00 A | 2018-11-08 19:00 A | 132FS+8h | 100% |  | 涂弘森 | 2h | 2h |  |
