# 需求管理1.0

Schedule from MS Project, 2018-09-20 to 2019-01-20.
Microsoft

## Calendars

- 标准: Mon-Fri 08:00-12:00, 13:00-17:00; Sat-Sun off. Exceptions (off unless hours are given): 2018-09-29 to 2018-09-30 08:00-12:00, 13:00-17:00, 2018-10-13 08:00-12:00, 13:00-17:00, 2018-10-20 08:00-12:00, 13:00-17:00, 2018-11-10 to 2018-11-11 08:00-12:00, 13:00-17:00, 2018-11-17 to 2018-11-18 08:00-12:00, 13:00-17:00, 2018-12-01 to 2018-12-02 08:00-12:00, 13:00-17:00, 2018-12-08 08:00-12:00, 13:00-17:00, 2018-12-22 to 2018-12-23 08:00-12:00, 13:00-17:00, 2018-12-29 to 2018-12-30 08:00-12:00, 13:00-17:00, 2019-01-05 to 2019-01-06 08:00-12:00, 13:00-17:00, 2019-01-12 08:00-12:00, 13:00-17:00, 2019-01-20 08:00-12:00, 13:00-17:00.

## Resources

| Resource |
| --- |
| 黄依伦 |
| 平易成 |
| 童鑫 |
| 陈侃 |
| 王淑雯 |

## Schedule

| ID | WBS | Task | Duration | Start | Finish | Predecessors | Total slack | Free slack | Constraint | Resources | Work | Text7 |
| --- | --- | --- | --- | --- | --- | --- | --- | --- | --- | --- | --- | --- |
| 1 | 1 | **教学辅助网站** | 106d? | 2018-09-20 08:00 | 2019-01-20 17:00 |  | 0d |  |  |  | 1315.1h |  |
| 2 | 1.1 | **准备工作** | 5.33d | 2018-09-20 08:00 | 2018-09-27 10:36 |  | 100.28d |  |  |  | 21.2h |  |
| 3 | 1.1.1 | 第一次会议 | 0.2d | 2018-09-20 08:00 | 2018-09-20 09:36 |  | 100.28d | 0d | start no earlier than 2018-09-20 08:00 | 平易成; 童鑫; 王淑雯; 陈侃; 黄依伦 | 8h |  |
| 4 | 1.1.2 | 第二次会议 | 0.2d | 2018-09-27 08:00 | 2018-09-27 09:36 | 3 | 95.47d | 0d | start no earlier than 2018-09-27 08:00 | 平易成; 童鑫; 王淑雯; 陈侃; 黄依伦 | 8h |  |
| 5 | 1.1.3 | 确定人员分工 | 1h | 2018-09-20 09:36 | 2018-09-20 10:36 | 3 | 105.67d |  |  | 平易成 | 1h |  |
| 6 | 1.1.4 | 制定组内章程 | 1h | 2018-09-27 09:36 | 2018-09-27 10:36 | 4 | 100.67d |  |  | 平易成; 童鑫; 王淑雯; 陈侃; 黄依伦 | 4.2h |  |
| 7 | 1.2 | **第一阶段** | 25.62d | 2018-09-29 08:00 | 2018-10-30 14:00 |  | 73.38d |  |  |  | 199.4h |  |
| 8 | 1.2.1 | **项目计划起草** | 1d | 2018-09-29 08:00 | 2018-09-29 17:00 |  | 94.38d | 0d |  |  | 22h | 项目计划模板 |
| 9 | 1.2.1.1 | 工作产品、进度和成本 | 0.75d | 2018-09-29 08:00 | 2018-09-29 15:00 |  | 94.62d |  |  | 陈侃 | 6h |  |
| 10 | 1.2.1.2 | 技术过程 | 0.5d | 2018-09-29 08:00 | 2018-09-29 12:00 |  | 94.88d |  |  | 童鑫 | 4h |  |
| 11 | 1.2.1.3 | 项目组织和管理过程 | 0.5d | 2018-09-29 08:00 | 2018-09-29 12:00 |  | 94.88d |  |  | 平易成 | 4h |  |
| 12 | 1.2.1.4 | 项目介绍和需求计划 | 1d | 2018-09-29 08:00 | 2018-09-29 17:00 |  | 94.38d |  |  | 黄依伦 | 8h |  |
| 13 | 1.2.2 | 甘特图初稿 | 1.25d | 2018-09-30 08:00 | 2018-10-01 10:00 | 8 | 96.75d |  | start no earlier than 2018-09-30 08:00 | 王淑雯 | 10h | project工具 |
| 14 | 1.2.3 | 第三次会议 | 0.2d | 2018-10-05 08:00 | 2018-10-05 09:36 | 4 | 87.67d | 2.8d | start no earlier than 2018-10-05 08:00 | 平易成; 童鑫; 王淑雯; 陈侃; 黄依伦 | 8h |  |
| 15 | 1.2.4 | UML概述翻转 | 1d | 2018-10-10 08:00 | 2018-10-10 17:00 | 14 | 84.88d | 0d | start no earlier than 2018-10-10 08:00 | 平易成 | 8h | UML2基础、UML用户指南 |
| 16 | 1.2.5 | UML概述翻转完善 | 0.88d | 2018-10-11 08:00 | 2018-10-11 16:00 | 15 | 88.12d |  | start no earlier than 2018-10-11 08:00 | 平易成 | 7h | 书本内容知识理解 |
| 17 | 1.2.6 | 第四次会议 | 0.2d | 2018-10-12 08:00 | 2018-10-12 09:36 | 14 | 87.6d | 5.8d | start no earlier than 2018-10-12 08:00 | 平易成; 童鑫; 王淑雯; 陈侃; 黄依伦 | 8h | 小组成员会议 |
| 18 | 1.2.7 | 可行性分析初稿 | 1d | 2018-10-13 08:00 | 2018-10-13 17:00 | 8 | 86d |  | start no earlier than 2018-10-13 08:00 | 黄依伦 | 8h | 可行性计划模板 |
| 19 | 1.2.8 | 原型设计1 | 0.75d | 2018-10-22 08:00 | 2018-10-22 15:00 | 25 | 79.25d |  | start no earlier than 2018-10-13 08:00 | 童鑫 | 6h |  |
| 20 | 1.2.9 | 需求项目计划修改1 | 0.62d | 2018-10-13 08:00 | 2018-10-13 14:00 | 8 | 83.38d | 5.38d | start no earlier than 2018-10-13 08:00 | 童鑫 | 5h | 项目计划初稿 |
| 21 | 1.2.10 | UML工具翻转 | 1d | 2018-10-25 08:00 | 2018-10-25 17:00 | 15, 27 | 75.5d | 0d | start no earlier than 2018-10-17 08:00 | 王淑雯 | 8h | UML2基础 |
| 22 | 1.2.11 | UML工具翻转修改完善 | 0.5d | 2018-10-26 08:00 | 2018-10-26 12:00 | 21 | 75.5d |  | start no earlier than 2018-10-18 08:00 | 王淑雯 | 4h | 书本内容和UML工具翻转PPT初稿 |
| 23 | 1.2.12 | 甘特图修改 | 0.75d | 2018-10-22 08:00 | 2018-10-22 15:00 | 25 | 79.25d |  | start no earlier than 2018-10-18 08:00 | 王淑雯 | 6h | 甘特图初稿 |
| 24 | 1.2.13 | 第五次会议 | 0.2d | 2018-10-19 08:00 | 2018-10-19 09:36 | 17 | 81.8d |  | start no earlier than 2018-10-19 08:00 | 平易成; 童鑫; 王淑雯; 陈侃; 黄依伦 | 6.4h | 小组成员会议 |
| 25 | 1.2.14 | 需求工程文档初稿 | 1d | 2018-10-20 08:00 | 2018-10-20 17:00 | 20 | 78d | 0d | start no earlier than 2018-10-20 08:00 | 黄依伦; 陈侃 | 16h | 需求工程文档模板 |
| 26 | 1.2.15 | 项目章程初稿 | 1d | 2018-10-22 08:00 | 2018-10-22 17:00 | 25 | 78d | 4.62d | start no earlier than 2018-10-20 08:00 | 陈侃 | 8h | 项目章程模板 |
| 27 | 1.2.16 | UML基础一功能图翻转 | 1d | 2018-10-24 08:00 | 2018-10-24 17:00 | 15 | 73.75d | 0d | start no earlier than 2018-10-24 08:00 | 陈侃 | 8h | UML2 |
| 28 | 1.2.17 | 第六次会议 | 0.2d | 2018-10-25 08:00 | 2018-10-25 09:36 | 27 | 76.05d | 0d | start no earlier than 2018-10-25 08:00 | 平易成; 童鑫; 王淑雯; 陈侃; 黄依伦 | 8h | 小组成员会议 |
| 29 | 1.2.18 | UML基础一功能图翻转修改 | 0.62d | 2018-10-26 08:00 | 2018-10-26 14:00 | 27 | 72.88d | 0d | start no earlier than 2018-10-26 08:00 | 陈侃 | 5h | UML书上知识 |
| 30 | 1.2.19 | 原型设计2 | 0.75d | 2018-10-25 09:36 | 2018-10-25 16:36 | 28 | 76.05d |  |  | 童鑫 | 6h |  |
| 31 | 1.2.20 | QA计划初稿 | 1d | 2018-10-26 14:00 | 2018-10-29 14:00 | 29 | 72.88d | 0d | finish no earlier than 2018-10-27 17:00 | 平易成; 童鑫 | 14h | 质量保证模板 |
| 32 | 1.2.21 | 需求工程文档修改 | 0.75d | 2018-10-29 14:00 | 2018-10-30 11:00 | 31 | 73.12d | 8.62d | start no earlier than 2018-10-26 08:00 | 平易成 | 6h | 需求工程文档初稿 |
| 33 | 1.2.22 | 需求PPT初稿 | 1d | 2018-10-29 14:00 | 2018-10-30 14:00 | 31 | 73.38d |  | start no earlier than 2018-10-26 08:00 | 黄依伦 | 8h | 需求PPT模板 需求工程文档 |
| 34 | 1.2.23 | 风险子计划初稿 | 0.75d | 2018-10-29 14:00 | 2018-10-30 11:00 | 31 | 72.88d | 4.62d | start no earlier than 2018-10-27 08:00 | 王淑雯 | 6h | 风险子计划模板 |
| 35 | 1.2.24 | 项目章程初稿修改 | 1d | 2018-10-29 14:00 | 2018-10-30 14:00 | 31, 26 | 73.38d |  | start no earlier than 2018-10-27 08:00 | 陈侃 | 8h | 项目章程初稿 |

Notes:
- 3: 第一次会议记录及录音文件
- 4: 第二次会议记录及录音文件
- 5: 组员各自分工
- 6: 输出组内制度文档
- 8: 项目计划初稿
- 12: 输出项目计划初稿文档
- 13: 输出甘特图的初稿
- 14: 第三次会议记录及录音文件
- 15: UML概述PPT初稿
- 16: UML概述PPT
- 17: 第四次会议记录及录音文件
- 18: 可行性计划分析文档初稿
- 19: 原型设计初稿
- 20: 项目计划初稿修改版
- 21: UML2工具PPT
- 22: UML工具翻转PPT
- 23: 甘特图修改
- 24: 第五次会议记录和录音
- 25: 需求工程文档0.1.1
- 26: 项目章程初稿0.1.1
- 27: UML功能图PPT
- 28: 第六次小组会议记录和录音文件
- 29: UML基础一PPT
- 31: QA初稿
- 32: 需求工程文档修改版
- 33: 需求PPT初稿0.1.1
- 34: 风险子计划初稿
- 35: 项目章程

| ID | WBS | Task | Type | Duration | Start | Finish | Predecessors | Total slack | Free slack | Constraint | Resources | Work | Text7 |
| --- | --- | --- | --- | --- | --- | --- | --- | --- | --- | --- | --- | --- | --- |
| 36 | 1.3 | **第二阶段** |  | 15d | 2018-10-31 08:00 | 2018-11-16 17:00 |  | 58d |  |  |  | 102h |  |
| 37 | 1.3.1 | 可行性分析组内评审 | milestone | 0.25d | 2018-10-31 08:00 | 2018-10-31 10:00 |  | 70.25d | 2.75d | start no earlier than 2018-10-31 08:00 | 平易成 | 2h |  |
| 38 | 1.3.2 | UML基础二界面原型翻转 |  | 1d | 2018-10-31 08:00 | 2018-10-31 17:00 | 27 | 71.5d | 1d | start no earlier than 2018-10-31 08:00 | 黄依伦 | 8h | UML用户指南和UML2 |
| 39 | 1.3.3 | UML基础二界面原型翻转修改 |  | 0.5d | 2018-11-02 08:00 | 2018-11-02 12:00 | 38 | 70.5d |  | start no earlier than 2018-11-02 08:00 | 黄依伦 | 4h | UML知识积累 |
| 40 | 1.3.4 | 第七次会议 |  | 0.2d | 2018-11-02 08:00 | 2018-11-02 09:36 | 28 | 70.6d | 4.8d | start no earlier than 2018-11-02 08:00 | 平易成; 童鑫; 王淑雯; 陈侃; 黄依伦 | 8h | 小组成员会议 |
| 41 | 1.3.5 | QA计划初稿修改 |  | 1d | 2018-11-05 08:00 | 2018-11-05 17:00 | 31 | 69d |  | start no earlier than 2018-11-05 08:00 | 陈侃 | 8h | QA计划初稿 |
| 42 | 1.3.6 | 风险子计划初稿修改 |  | 0.75d | 2018-11-06 08:00 | 2018-11-06 15:00 | 34 | 68.25d |  | start no earlier than 2018-11-06 08:00 | 陈侃 | 6h | 风险子计划初稿 |
| 43 | 1.3.7 | 项目计划评审 | milestone | 0.25d | 2018-11-05 08:00 | 2018-11-05 10:00 | 37 | 67.5d | 0d | start no earlier than 2018-11-05 08:00 | 平易成 | 2h | 项目计划 |
| 44 | 1.3.8 | 项目计划修改 |  | 0.62d | 2018-11-05 10:00 | 2018-11-05 16:00 | 43 | 67.5d | 0.12d | start no earlier than 2018-11-04 17:00 | 黄依伦; 陈侃 | 9h | 项目计划 |
| 45 | 1.3.9 | 原型设计3 |  | 0.75d | 2018-11-06 08:00 | 2018-11-06 15:00 | 44 | 67.38d | 6.25d | start no earlier than 2018-11-06 08:00 | 童鑫 | 6h | 原型2 |
| 46 | 1.3.10 | 第一次教师访谈 |  | 0.5d | 2018-11-06 08:00 | 2018-11-06 12:00 | 44 | 68.5d |  | start no earlier than 2018-11-06 08:00 | 黄依伦; 陈侃 | 8h | 获取第一次需求 |
| 47 | 1.3.11 | 第八次会议 |  | 0.2d | 2018-11-09 08:00 | 2018-11-09 09:36 | 40 | 65.8d |  | start no earlier than 2018-11-09 08:00 | 平易成; 童鑫; 王淑雯; 陈侃; 黄依伦 | 8h | 小组所有成员 |
| 48 | 1.3.12 | 需求工程文档二次修改 |  | 0.5d | 2018-11-10 08:00 | 2018-11-10 12:00 | 32 | 64.5d |  | start no earlier than 2018-11-10 08:00 | 平易成 | 4h | 需求工程文档 |
| 49 | 1.3.13 | 甘特图修改2 |  | 0.75d | 2018-11-11 08:00 | 2018-11-11 15:00 | 44 | 63.25d |  | start no earlier than 2018-11-11 08:00 | 王淑雯 | 6h | 甘特图1 |
| 50 | 1.3.14 | 原型设计4 |  | 0.88d | 2018-11-13 08:00 | 2018-11-13 16:00 | 45 | 61.12d |  | start no earlier than 2018-11-13 08:00 | 童鑫 | 7h | 原型3 |
| 51 | 1.3.15 | 第九次会议 |  | 0.2d | 2018-11-14 08:00 | 2018-11-14 09:36 |  | 58.92d | 1.8d | start no earlier than 2018-11-14 08:00 | 平易成; 童鑫; 王淑雯; 陈侃; 黄依伦 | 8h | 小组成员会议 |
| 52 | 1.3.16 | 可行性分析修改 |  | 1d | 2018-11-16 08:00 | 2018-11-16 17:00 | 51 | 58d |  | start no earlier than 2018-11-16 08:00 | 黄依伦 | 8h | 可行性分析 |
| 53 | 1.4 | **第三阶段** |  | 10.62d? | 2018-11-17 08:00 | 2018-11-29 14:00 |  | 47.38d |  |  |  | 52h |  |
| 54 | 1.4.1 | 愿景文档初稿1 |  | 0.5d | 2018-11-17 08:00 | 2018-11-17 12:00 | 51 | 56.12d | 4.5d | start no earlier than 2018-11-17 08:00 | 王淑雯 | 4h | 愿景文档模板 |
| 55 | 1.4.2 | 需求PPT初稿修改 |  | 0.75d | 2018-11-18 08:00 | 2018-11-18 15:00 | 51 | 56.25d |  | start no earlier than 2018-11-18 08:00 | 平易成 | 6h | 需求PPT初稿 |
| 56 | 1.4.3 | 需求规格说明书起草 |  | 1d | 2018-11-23 08:00 | 2018-11-23 17:00 | 58 | 51d |  | start no earlier than 2018-11-23 08:00 | 王淑雯 | 8h | 需求规格模板 |
| 57 | 1.4.4 | 愿景文档初稿2 |  | 0.62d | 2018-11-22 08:00 | 2018-11-22 14:00 | 54 | 51.62d | 0.38d | start no earlier than 2018-11-22 08:00 | 平易成 | 5h | 愿景文档模板 |
| 58 | 1.4.5 | 第十次会议 |  | 0.2d | 2018-11-22 08:00 | 2018-11-22 09:36 | 51 | 51.58d | 0.8d | start no earlier than 2018-11-22 08:00 | 平易成; 黄依伦; 陈侃; 童鑫; 王淑雯 | 8h | 小组成员会议 |
| 59 | 1.4.6 | 愿景文档初稿3 |  | 0.75d | 2018-11-23 08:00 | 2018-11-23 15:00 | 57 | 51.25d |  | start no earlier than 2018-11-23 08:00 | 黄依伦 | 6h | 愿景文档初稿和愿景文档 |
| 60 | 1.4.7 | 访谈学生代表 |  | 0.25d | 2018-11-23 15:00 | 2018-11-25 17:00 | 58 | 51d |  | finish no earlier than 2018-11-25 17:00 | 陈侃 | 2h | 了解代表的一些需求 |
| 61 | 1.4.8 | UML基础三翻转 |  | 0.88d | 2018-11-28 08:00 | 2018-11-28 16:00 |  | 45.42d | 0d | start no earlier than 2018-11-28 08:00 | 童鑫 | 7h | UML2 |
| 62 | 1.4.9 | 需求工程文档评审 | milestone | 0.25d? | 2018-11-28 16:00 | 2018-11-29 09:00 | 61 | 45.42d | 0d |  | 平易成 | 2h | 前阶段工作文档甘特图 |
| 63 | 1.4.10 | UML基础三翻转修改 |  | 0.5d | 2018-11-29 09:00 | 2018-11-29 14:00 | 62 | 45.42d | 0d | start no earlier than 2018-11-29 08:00 | 童鑫 | 4h | uml基础三PPT |

Notes:
- 38: UML基础二PPT
- 39: UML基础二PPT
- 40: 第七次小组会议记录及录音文件
- 41: QA计划
- 42: 风险子计划
- 43: 项目计划存在的问题
- 44: 项目计划
- 45: 原型3
- 46: 第一次访谈记录
- 47: 第八次会议记录
- 48: 需求工程文档
- 49: 甘特图
- 50: 原型4
- 51: 第九次会议记录及录音
- 52: 可行性分析
- 54: 愿景文档初稿
- 55: 需求PPT
- 56: 需求规格说明
- 57: 愿景文档初稿
- 58: 第十次会议记录及录音
- 59: 愿景文档
- 60: 访谈记录
- 61: 第十次会议记录及录音
- 62: 文档改正
- 63: UML基础三PPT修改版

| ID | WBS | Task | Duration | Start | Finish | Predecessors | Total slack | Free slack | Constraint | Resources | Work | Text7 |
| --- | --- | --- | --- | --- | --- | --- | --- | --- | --- | --- | --- | --- |
| 64 | 1.5 | **第四阶段** | 12.38d | 2018-11-29 08:00 | 2018-12-12 11:00 |  | 35.62d |  |  |  | 167.6h |  |
| 65 | 1.5.1 | UML基础四翻转 | 0.45d | 2018-11-29 14:00 | 2018-11-30 08:36 | 63 | 45.42d | 0d | start no earlier than 2018-11-28 08:00 | 平易成; 陈侃; 童鑫; 王淑雯; 黄依伦 | 16.2h | UML2和用户指南 |
| 66 | 1.5.2 | UML基础四翻转修改 | 0.5d | 2018-11-30 08:36 | 2018-11-30 13:36 | 65 | 45.42d | 0d |  | 童鑫 | 4h | UML基础四翻转PPT |
| 67 | 1.5.3 | 修改需求PPT | 1d | 2018-11-30 13:36 | 2018-12-01 13:36 | 66 | 45.42d |  |  | 黄依伦; 平易成 | 13h | 需求PPT |
| 68 | 1.5.4 | 需求工程计划修改 | 0.75d | 2018-11-30 08:00 | 2018-11-30 15:00 |  | 45.17d | 0d | start no earlier than 2018-11-30 08:00 | 平易成; 童鑫 | 11h | 需求工程计划初稿 |
| 69 | 1.5.5 | 第十一次会议 | 0.2d | 2018-11-29 08:00 | 2018-11-29 09:36 | 58 | 46.77d | 0.8d | start no earlier than 2018-11-29 08:00 | 平易成; 童鑫; 陈侃; 王淑雯; 黄依伦 | 8h | 小组成员会议 |
| 70 | 1.5.6 | 第十二次会议 | 0.2d | 2018-11-30 08:00 | 2018-11-30 09:36 | 69 | 45.98d | 0.55d | start no earlier than 2018-11-30 08:00 | 平易成; 童鑫; 王淑雯; 陈侃; 黄依伦 | 8h | 小组成员会议 |
| 71 | 1.5.7 | 第一次teambuilding | 0.2d | 2018-11-30 15:00 | 2018-11-30 16:36 | 68, 69, 70 | 45.42d | 0.05d |  | 平易成; 童鑫; 王淑雯; 陈侃; 黄依伦 | 8h | 小组所有成员文档整合改进 |
| 72 | 1.5.8 | 甘特图修改3 | 0.62d | 2018-12-01 08:00 | 2018-12-01 14:00 | 71 | 45.38d |  | start no earlier than 2018-12-01 08:00 | 王淑雯 | 5h | 甘特图 |
| 73 | 1.5.9 | 软件需求变更文档 | 0.62d | 2018-12-03 08:00 | 2018-12-03 14:00 |  | 40.8d | 0.38d | start no earlier than 2018-12-03 08:00 | 童鑫 | 5h | 软件需求变更模板 |
| 74 | 1.5.10 | 第二次教师访谈 | 0.2d | 2018-12-04 08:00 | 2018-12-04 09:36 | 73 | 40.42d | 0d | start no earlier than 2018-12-04 08:00 | 平易成; 童鑫; 王淑雯; 陈侃; 黄依伦 | 8h | 跟进需求 |
| 75 | 1.5.11 | 配置管理文件 | 0.38d | 2018-12-04 09:36 | 2018-12-04 13:36 | 74 | 40.55d | 0d | start no earlier than 2018-12-02 08:00 | 平易成; 陈侃 | 5h | 关于一些总体配置问题 |
| 76 | 1.5.12 | 其他管理文件 | 0.5d | 2018-12-04 13:36 | 2018-12-05 08:36 | 75 | 40.55d | 0.93d | start no earlier than 2018-12-02 08:00 | 平易成; 黄依伦 | 8h | 关于一些资源的管理 |
| 77 | 1.5.13 | 第十三次小组会议 | 0.2d | 2018-12-06 08:00 | 2018-12-06 09:36 | 76 | 40.6d | 4.8d | start no earlier than 2018-12-06 08:00 | 平易成; 童鑫; 王淑雯; 陈侃; 黄依伦 | 7.4h | 确定需求 |
| 78 | 1.5.14 | 愿景文档修改 | 1d | 2018-12-05 08:00 | 2018-12-05 17:00 |  | 40d | 0d | start no earlier than 2018-12-05 08:00 | 平易成; 黄依伦 | 16h | 愿景文档初稿3 |
| 79 | 1.5.15 | 第三次教师访谈 | 1d | 2018-12-06 08:00 | 2018-12-06 17:00 | 78 | 40d |  |  | 平易成; 童鑫; 王淑雯; 陈侃; 黄依伦 | 34h |  |
| 80 | 1.5.16 | 原型设计5 | 1.38d | 2018-12-11 08:00 | 2018-12-12 11:00 | 76 | 35.62d |  | start no earlier than 2018-12-11 08:00 | 童鑫 | 11h |  |
| 81 | 1.6 | **第五阶段** | 36.25d | 2018-12-06 08:00 | 2019-01-15 10:00 |  | 4.75d |  |  |  | 769.9h |  |
| 82 | 1.6.1 | 需求规格说明初稿 | 1d | 2018-12-06 08:00 | 2018-12-06 17:00 |  | 37.62d | 3d | start no earlier than 2018-12-06 08:00 | 王淑雯 | 8h | 需求规格说明书草稿 |
| 83 | 1.6.2 | 软件需求规格说修改1 | 1.25d | 2018-12-11 08:00 | 2018-12-12 10:00 | 74, 82 | 34.62d | 1.75d | start no earlier than 2018-12-11 08:00 | 王淑雯 | 10h | 需求规格说明书初稿 |
| 84 | 1.6.3 | 第十四次小组会议 | 0.2d | 2018-12-12 08:00 | 2018-12-12 09:36 | 77 | 35.8d |  | start no earlier than 2018-12-12 08:00 | 平易成; 童鑫; 王淑雯; 陈侃; 黄依伦 | 8h | 小组所有成员 |
| 85 | 1.6.4 | 第十五次小组会议 | 1d | 2018-12-13 08:00 | 2018-12-13 17:00 |  | 29.38d | 0d | start no earlier than 2018-12-13 08:00 | 平易成; 童鑫; 王淑雯; 陈侃; 黄依伦 | 14.4h | 小组所有成员 |
| 86 | 1.6.5 | 软件需求规格说明书修改 | 1.12d | 2018-12-14 08:00 | 2018-12-17 09:00 | 83 | 32.88d |  | start no earlier than 2018-12-14 08:00 | 平易成; 童鑫; 王淑雯 | 20h | 需求规格说明书初稿修改版 |
| 87 | 1.6.6 | UI界面修改游客 | 0.75d | 2018-12-20 10:00 | 2018-12-20 17:00 | 93 | 29d |  | start no earlier than 2018-12-19 08:00 | 王淑雯 | 6h |  |
| 88 | 1.6.7 | 需求变更申请 | 0.12d | 2018-12-14 08:00 | 2018-12-14 09:00 | 85 | 29.38d | 3.88d |  | 平易成 | 1h | 进度缓慢 |
| 89 | 1.6.8 | 管理员界面修改 | 1.38d | 2018-12-20 10:00 | 2018-12-21 14:00 | 93 | 26.12d | 0.38d |  | 黄依伦 | 11h | 界面雏形 |
| 90 | 1.6.9 | 教师界面修改 | 1.75d | 2018-12-20 10:00 | 2018-12-21 17:00 | 93 | 26.25d | 0d |  | 童鑫; 平易成 | 26h | 界面雏形 |
| 91 | 1.6.10 | 学生界面修改 | 2d | 2018-12-20 10:00 | 2018-12-22 10:00 | 93 | 25.5d | 0d | start no earlier than 2018-12-20 08:00 | 陈侃 | 16h | 界面雏形 |
| 92 | 1.6.11 | 游客界面修改 | 1d | 2018-12-20 10:00 | 2018-12-21 10:00 | 93 | 27.88d | 0d |  | 王淑雯 | 8h | 游客界面初稿 |
| 93 | 1.6.12 | 教师第四次访谈 | 0.25d | 2018-12-20 08:00 | 2018-12-20 10:00 | 88 | 25.5d | 0d | start no earlier than 2018-12-20 08:00 | 平易成; 童鑫; 王淑雯; 陈侃; 黄依伦 | 9h | 界面 |
| 94 | 1.6.13 | 游客第一次访谈 | 0.25d | 2018-12-21 10:00 | 2018-12-21 12:00 | 88, 92 | 27.88d | 0.5d | start no earlier than 2018-12-20 08:00 | 平易成; 童鑫; 王淑雯; 陈侃; 黄依伦 | 10h | 游客界面 |
| 95 | 1.6.14 | 管理员第一次访谈 | 0.25d | 2018-12-22 08:00 | 2018-12-22 10:00 | 89 | 26.38d | 0d | start no earlier than 2018-12-22 08:00 | 平易成; 童鑫; 王淑雯; 陈侃; 黄依伦 | 10h | 管理员界面 |
| 96 | 1.6.15 | 学生第一次访谈 | 0.25d | 2018-12-22 10:00 | 2018-12-22 12:00 | 91, 89 | 25.5d | 0d |  | 平易成; 童鑫; 王淑雯; 陈侃; 黄依伦 | 10h |  |
| 97 | 1.6.16 | 软件需求规格说明书修改 | 1.25d | 2018-12-20 08:00 | 2018-12-21 10:00 | 88 | 26.75d | 0d | start no earlier than 2018-12-20 08:00 | 平易成; 童鑫; 王淑雯; 陈侃; 黄依伦 | 43h | 测试用例修改 |
| 98 | 1.6.17 | 教师测试用例 | 1.88d | 2018-12-21 10:00 | 2018-12-23 09:00 | 97 | 26.88d |  | start no earlier than 2018-12-20 08:00 | 平易成; 童鑫 | 24h | 测试用例初稿 |
| 99 | 1.6.18 | 管理员测试用例 | 1.75d | 2018-12-21 10:00 | 2018-12-22 17:00 | 97 | 27d |  | start no earlier than 2018-12-20 08:00 | 黄依伦 | 14h | 测试用例初稿 |
| 100 | 1.6.19 | 学生测试用例 | 1.62d | 2018-12-21 10:00 | 2018-12-22 16:00 | 97 | 27.12d |  | start no earlier than 2018-12-20 08:00 | 陈侃 | 13h | 测试用例初稿 |
| 101 | 1.6.20 | 游客测试用例 | 2d | 2018-12-21 10:00 | 2018-12-23 10:00 | 97 | 26.75d |  | start no earlier than 2018-12-20 08:00 | 王淑雯 | 16h | 测试用例初稿 |
| 102 | 1.6.21 | UML综述PPT | 1.12d | 2018-12-22 10:00 | 2018-12-23 11:00 | 91 | 26.62d |  | start no earlier than 2018-12-22 08:00 | 陈侃 | 9h |  |
| 103 | 1.6.22 | 管理员界面修改 | 1.38d | 2018-12-22 10:00 | 2018-12-23 14:00 | 95 | 26.38d |  | start no earlier than 2018-12-22 08:00 | 黄依伦 | 11h | 界面雏形 |
| 104 | 1.6.23 | 教师界面修改 | 1.75d | 2018-12-22 08:00 | 2018-12-23 15:00 | 89, 90 | 26.25d |  | start no earlier than 2018-12-22 08:00 | 童鑫; 平易成 | 17h | 界面雏形 |
| 105 | 1.6.24 | 学生界面修改 | 2d | 2018-12-22 13:00 | 2018-12-24 12:00 | 96 | 25.5d |  | start no earlier than 2018-12-22 08:00 | 陈侃 | 16h | 界面雏形 |
| 106 | 1.6.25 | 游客界面修改 | 0.62d | 2018-12-22 08:00 | 2018-12-22 14:00 | 94 | 27.38d |  | start no earlier than 2018-12-22 08:00 | 王淑雯 | 5h | 游客确认界面后 |
| 107 | 1.6.26 | 软件需求规格说明书修改 | 1.62d | 2018-12-23 08:00 | 2018-12-24 14:00 | 97 | 25.38d |  | start no earlier than 2018-12-23 08:00 | 平易成; 童鑫; 王淑雯; 陈侃; 黄依伦 | 43h | 需求规格说明书初稿修改版3 |
| 108 | 1.6.27 | 用户手册初稿 | 1.5d | 2018-12-23 08:00 | 2018-12-24 12:00 |  | 19.56d | 0d | start no earlier than 2018-12-23 08:00 | 王淑雯 | 12h |  |
| 109 | 1.6.28 | 管理员界面修改 | 1.25d | 2018-12-24 13:00 | 2018-12-25 15:00 | 108 | 21.25d | 0d |  | 黄依伦 | 10h |  |
| 110 | 1.6.29 | 测试用例整合加图 | 1.88d | 2018-12-24 13:00 | 2018-12-26 11:00 | 108 | 19.56d | 0d | start no earlier than 2018-12-23 08:00 | 平易成; 童鑫 | 25h |  |
| 111 | 1.6.30 | 界面更新 | 1.88d | 2018-12-25 15:00 | 2018-12-27 14:00 | 109 | 21.25d | 0d | start no earlier than 2018-12-24 08:00 | 童鑫 | 15h |  |
| 112 | 1.6.31 | 用户手册修改 | 1.12d | 2018-12-27 14:00 | 2018-12-28 15:00 | 111, 108 | 21.25d |  |  | 王淑雯 | 9h | 用户手册初稿 |
| 113 | 1.6.32 | 甘特图修改完善 | 0.12d | 2018-12-27 08:00 | 2018-12-27 09:00 | 108 | 22.88d |  | start no earlier than 2018-12-27 08:00 | 王淑雯 | 1h |  |
| 114 | 1.6.33 | 综述PPT修改 | 1d | 2018-12-26 11:00 | 2018-12-27 11:00 | 110 | 19.56d | 1.62d | start no earlier than 2018-12-26 08:00 | 陈侃 | 8h | 综述PPT初稿 |
| 115 | 1.6.34 | 管理员第二次访谈 | 0.06d | 2018-12-29 08:00 | 2018-12-29 08:30 | 114 | 17.94d | 0.94d | start no earlier than 2018-12-29 08:00 | 平易成; 童鑫; 王淑雯; 陈侃; 黄依伦 | 2.5h |  |
| 116 | 1.6.35 | 第二次tb | 1d | 2018-12-30 08:00 | 2018-12-30 17:00 | 115 | 17d | 0d | start no earlier than 2018-12-30 08:00 | 平易成; 童鑫; 王淑雯; 陈侃; 黄依伦 | 40h |  |
| 117 | 1.6.36 | 修改用户手册 | 1d | 2018-12-31 08:00 | 2018-12-31 17:00 | 116 | 18d |  |  | 王淑雯 | 8h | 用户手册修改版 |
| 118 | 1.6.37 | 网站版界面修改完善 | 1.25d | 2018-12-29 10:00 | 2018-12-30 12:00 | 121 | 19.5d |  | start no earlier than 2018-12-29 08:00 | 童鑫 | 10h |  |
| 119 | 1.6.38 | 管理员界面修改 | 2.5d | 2018-12-30 08:00 | 2019-01-01 12:00 | 121, 115 | 17.5d |  | start no earlier than 2018-12-30 08:00 | 黄依伦 | 20h |  |
| 120 | 1.6.39 | 变更申请表制作 | 0.75d | 2018-12-29 08:00 | 2018-12-29 15:00 | 110 | 20.25d |  | start no earlier than 2018-12-29 08:00 | 王淑雯 | 6h |  |
| 121 | 1.6.40 | 手机版界面制作 | 1.25d | 2018-12-28 08:00 | 2018-12-29 10:00 |  | 18.25d | 0d | start no earlier than 2018-12-28 08:00 | 平易成 | 10h |  |
| 122 | 1.6.41 | 学生界面修改 | 1d | 2018-12-30 08:00 | 2018-12-30 17:00 | 121 | 19d |  | start no earlier than 2018-12-30 08:00 | 陈侃 | 8h |  |
| 123 | 1.6.42 | 系统设计与实现文档 | 1d | 2018-12-30 08:00 | 2018-12-30 17:00 | 121 | 19d |  | start no earlier than 2018-12-30 08:00 | 王淑雯 | 8h | 寻找模板 |
| 124 | 1.6.43 | 教师用例修改 | 1d | 2018-12-31 08:00 | 2018-12-31 17:00 | 116 | 18d |  | start no earlier than 2018-12-29 08:00 | 平易成 | 8h |  |
| 125 | 1.6.44 | 学生用例修改 | 2d | 2018-12-31 08:00 | 2019-01-01 17:00 | 116 | 17d |  | start no earlier than 2018-12-30 08:00 | 陈侃 | 16h |  |
| 126 | 1.6.45 | 管理员用例修改 | 1.38d | 2018-12-31 08:00 | 2019-01-01 11:00 | 116 | 17.62d |  | start no earlier than 2018-12-30 08:00 | 黄依伦 | 11h |  |
| 127 | 1.6.46 | 游客用例修改 | 0.12d | 2018-12-31 08:00 | 2018-12-31 09:00 | 116 | 18.88d |  | start no earlier than 2018-12-31 08:00 | 王淑雯 | 1h |  |
| 128 | 1.6.47 | 用户手册修改 | 0.75d | 2019-01-02 08:00 | 2019-01-02 15:00 |  | 13.12d | 0d | start no earlier than 2019-01-02 08:00 | 王淑雯 | 6h |  |
| 129 | 1.6.48 | 手机端界面修改完善 | 2d | 2019-01-02 15:00 | 2019-01-04 15:00 | 128 | 13.12d | 0.62d | start no earlier than 2019-01-01 08:00 | 童鑫; 平易成 | 27h |  |
| 130 | 1.6.49 | 第十六次会议 | 0.12d | 2018-12-26 08:00 | 2018-12-26 09:00 |  | 22.5d | 14.88d | start no earlier than 2018-12-26 08:00 | 平易成; 童鑫; 王淑雯; 陈侃; 黄依伦 | 5h |  |
| 131 | 1.6.50 | 培训计划 | 0.5d | 2019-01-04 08:00 | 2019-01-04 12:00 | 128 | 14d | 0.5d | start no earlier than 2019-01-04 08:00 | 王淑雯 | 4h |  |
| 132 | 1.6.51 | 系统维护计划 | 0.5d | 2019-01-05 08:00 | 2019-01-05 12:00 | 131 | 13.5d |  | start no earlier than 2019-01-05 08:00 | 王淑雯 | 4h |  |
| 133 | 1.6.52 | 部署计划 | 0.75d | 2019-01-04 08:00 | 2019-01-04 15:00 | 128 | 14.25d |  | start no earlier than 2019-01-04 08:00 | 陈侃 | 6h |  |

Notes:
- 65: UML基础四翻转PPT
- 66: UML基础四PPT修改版
- 67: 需求PPT
- 68: 需求工程计划修改
- 69: 第十一次会议记录及录音
- 70: 第十二次会议记录及录音
- 71: 文档改进
- 72: 甘特图
- 73: 软件需求变更0.1.1
- 74: 二次访谈记录
- 75: 配置管理文档
- 76: 范围、时间、成本、人力资源、干系人、质量等品管理文档
- 77: 第十三次小组会议记录及录音文件
- 78: 愿景文档
- 79: 愿景文档成稿
- 82: 需求规格说明书初稿
- 83: 需求规格说明书初稿修改版
- 84: 第十四次会议记录
- 85: 第十五次会议记录
- 86: 需求规格说明书初稿修改版2
- 88: 需求规格评审后移
- 89: 管理员界面修改
- 90: 教师界面修改
- 91: 学生界面修改
- 92: 游客界面修改
- 93: 界面功能确定
- 94: 游客界面修改
- 95: 管理员界面界面修改
- 97: 需求规格说明书初稿修改版3
- 98: 教师测试用例
- 99: 管理员测试用例
- 100: 学生测试用例
- 101: 游客测试用例
- 103: 管理员界面修改
- 104: 教师界面修改
- 105: 学生界面修改
- 106: 游客界面、功能修改
- 107: 软件需求规格说明书修改4
- 108: 用户手册草稿
- 109: 管理员界面
- 110: srs
- 111: 界面
- 112: 用户手册
- 114: 综述PPT修改后完整版
- 117: 用户手册再次修改
- 118: 网站界面
- 119: 完善后管理员界面
- 120: 变更申请打分表
- 121: APP界面
- 122: 网站版学生界面
- 123: 系统设计与实现草稿
- 128: 用户手册最终版
- 129: 手机端页面
- 131: 培训计划
- 132: 系统维护计划
- 133: 部署计划

| ID | WBS | Task | Type | Duration | Start | Finish | Predecessors | Total slack | Free slack | Constraint | Resources | Work | Text7 |
| --- | --- | --- | --- | --- | --- | --- | --- | --- | --- | --- | --- | --- | --- |
| 134 | 1.6.53 | 测试计划 |  | 0.75d | 2019-01-04 08:00 | 2019-01-04 15:00 | 128 | 13.12d | 0.62d | start no earlier than 2019-01-04 08:00 | 陈侃 | 6h |  |
| 135 | 1.6.54 | 需求PPT修改完善 |  | 1.12d | 2019-01-05 11:00 | 2019-01-06 12:00 | 134, 129, 137 | 12.5d |  |  | 黄依伦 | 9h |  |
| 136 | 1.6.55 | 图的整理 |  | 0.75d | 2019-01-05 08:00 | 2019-01-05 15:00 | 128 | 11.88d | 0d | start no earlier than 2019-01-05 08:00 | 平易成 | 6h |  |
| 137 | 1.6.56 | 需求规格说明书修改 |  | 1.38d | 2019-01-04 08:00 | 2019-01-05 11:00 | 128 | 12.5d | 0d | start no earlier than 2019-01-04 08:00 | 平易成 | 11h |  |
| 138 | 1.6.57 | 优先级确定 |  | 0.25d | 2019-01-05 15:00 | 2019-01-05 17:00 | 136 | 11.88d | 0d | start no earlier than 2019-01-05 08:00 | 平易成; 童鑫; 王淑雯; 陈侃; 黄依伦 | 6h |  |
| 139 | 1.6.58 | JAD会议 |  | 0.5d | 2019-01-06 08:00 | 2019-01-06 12:00 | 138 | 11.88d | 4.5d | start no earlier than 2019-01-06 08:00 | 平易成; 童鑫; 王淑雯; 陈侃; 黄依伦 | 9h |  |
| 140 | 1.6.59 | 第十七次小组会议 |  | 0.25d | 2019-01-10 08:00 | 2019-01-10 10:00 | 130 | 7.62d | 0d | start no earlier than 2019-01-10 08:00 | 平易成; 童鑫; 王淑雯; 陈侃; 黄依伦 | 6h |  |
| 141 | 1.6.60 | 修改测试用例 |  | 0.62d | 2019-01-11 08:00 | 2019-01-11 14:00 | 140, 139 | 7.38d |  | start no earlier than 2019-01-11 08:00 | 陈侃 | 5h |  |
| 142 | 1.6.61 | 需求管理 |  | 0.62d | 2019-01-12 08:00 | 2019-01-12 14:00 | 140 | 6.38d |  | start no earlier than 2019-01-12 08:00 | 陈侃 | 5h |  |
| 143 | 1.6.62 | 需求变更 |  | 0.75d | 2019-01-11 08:00 | 2019-01-11 15:00 | 140 | 7.25d |  | start no earlier than 2019-01-11 08:00 | 平易成 | 6h |  |
| 144 | 1.6.63 | 变更评审 | milestone | 0.25d | 2019-01-10 10:00 | 2019-01-10 12:00 | 140, 130 | 7.62d | 1.5d |  | 平易成; 童鑫; 王淑雯; 陈侃; 黄依伦 | 9h |  |
| 145 | 1.6.64 | 项目总结报告 |  | 0.5d | 2019-01-12 08:00 | 2019-01-12 12:00 | 144 | 6.5d |  | start no earlier than 2019-01-12 08:00 | 王淑雯 | 4h |  |
| 146 | 1.6.65 | 概要设计说明 |  | 0.38d | 2019-01-12 08:00 | 2019-01-12 11:00 | 144 | 6.62d |  | start no earlier than 2019-01-12 08:00 | 王淑雯 | 3h |  |
| 147 | 1.6.66 | 修改srs |  | 0.62d | 2019-01-12 08:00 | 2019-01-12 14:00 | 144 | 6.12d | 1.38d | start no earlier than 2019-01-12 08:00 | 黄依伦 | 5h |  |
| 148 | 1.6.67 | 总评文件整理 |  | 0.38d | 2019-01-10 08:00 | 2019-01-10 11:00 | 97 | 7.62d | 1.62d | start no earlier than 2019-01-10 08:00 | 平易成 | 3h | 各类文档整合 |
| 149 | 1.6.68 | 总评审PPT |  | 1d | 2019-01-12 08:00 | 2019-01-12 17:00 | 148 | 6d |  | start no earlier than 2019-01-12 08:00 | 童鑫 | 8h |  |
| 150 | 1.6.69 | 组内总评 | milestone | 0.25d | 2019-01-15 08:00 | 2019-01-15 10:00 | 147 | 4.75d |  | start no earlier than 2019-01-15 08:00 | 平易成; 童鑫; 王淑雯; 陈侃; 黄依伦 | 10h |  |
| 151 | 1.7 | **项目总结** |  | 10d | 2019-01-09 08:00 | 2019-01-20 17:00 |  | 0d |  |  |  | 3h |  |
| 152 | 1.7.1 | 需求规格说明书评审 | milestone | 0.07d | 2019-01-09 08:00 | 2019-01-09 08:36 |  | 7.92d | 5.92d | start no earlier than 2019-01-09 08:00 | 平易成; 童鑫; 王淑雯; 陈侃; 黄依伦 | 3h |  |
| 153 | 1.7.2 | 总评审 | milestone | 2d | 2019-01-16 08:00 | 2019-01-17 17:00 | 152 | 2d |  | start no earlier than 2019-01-16 08:00 |  |  |  |
| 154 | 1.7.3 | 项目收尾 |  | 1d | 2019-01-20 08:00 | 2019-01-20 17:00 |  | 0d |  | start no earlier than 2019-01-20 08:00 |  |  |  |

Notes:
- 134: 测试计划
- 135: 需求PPT
- 148: 总文档
- 149: 总评审PPT
