# 甘特图

Schedule from MS Project, 2018-09-20 to 2019-01-22, A marks actual dates.

## Calendars

- 标准: Mon-Sun 08:00-12:00, 13:00-17:00. Exceptions (off unless hours are given): 2018-09-20 to 2018-09-30 19:30-20:00, 20:15-20:45 (9.20-9.30工作安排), 2018-10-01 to 2018-10-07 (国庆放假), 2018-10-08 to 2018-11-30 19:30-20:00, 20:15-20:45 (10.8-11.30工作安排), 2018-12-01 15:00-16:00, 16:01-20:00 (12.1团建), 2018-12-02 to 2018-12-15 19:00-19:30, 19:45-20:15 (12.2-12.15工作安排), 2018-12-16 19:30-20:30, 20:45-21:45 (12.16-12.29工作安排), 2018-12-30 to 2019-01-01 08:00-11:30, 14:30-17:00 (元旦安排), 2019-01-02 to 2019-01-10 19:30-20:00, 20:15-20:45 (1.2-1.10工作安排), 2019-01-11 19:30-20:30, 20:45-23:45 (1.11工作安排), 2019-01-12 to 2019-01-15 10:30-12:00, 19:00-20:30 (1.12-1.15工作安排), 2019-01-21 17:00-19:00, 19:01-21:01 (1.21散伙饭).

## Resources

| Resource |
| --- |
| G13全体 |
| 严翔宇 |
| 杨溢 |
| 陈维 |
| 陈安侍 |
| 陈俊杉 |

## Schedule

| ID | WBS | Task | Type | Duration | Start | Finish | Predecessors | Complete | Remaining | Actual start | Actual finish | Total slack | Constraint | Resources | Work | Actual work | 输入 | 输出 |
| --- | --- | --- | --- | --- | --- | --- | --- | --- | --- | --- | --- | --- | --- | --- | --- | --- | --- | --- |
| 1 | 1 | **软件工程系列课程教学辅助网站计划** |  | 37.44d | 2018-09-20 08:00 A | 2019-01-22 20:00 |  | 52% | 17.83d |  |  |  |  |  | 687h | 372.5h |  |  |
| 2 | 1.1 | **项目启动** |  | 2d | 2018-09-26 08:00 | 2018-09-30 20:00 |  | 100% |  | 2018-09-27 08:00 | 2018-09-29 20:45 |  |  |  | 11h | 11h |  |  |
| 3 | 1.1.1 | 第一次小组会议 | manual | 1h | 2018-09-27 08:00 A | 2018-09-27 09:00 A |  | 100% |  |  |  |  |  | 陈安侍 [40%]; 陈俊杉 [15%]; 陈维 [15%]; 严翔宇 [15%]; 杨溢 [15%] | 5h | 5h | 课程要求 | 任务安排,会议记录，团队及 |
| 4 | 1.1.2 | 项目章程编写 |  | 3h | 2018-09-27 19:30 A | 2018-09-29 20:45 A | 3 | 100% |  |  |  |  |  | 陈安侍 | 3h | 3h | 论证，协议，环境因素 | 项目章程 |
| 5 | 1.1.3 | 环境搭建 |  | 3h | 2018-09-27 09:00 A | 2018-09-27 12:00 A | 3 | 100% |  |  |  |  |  | 陈安侍 [40%]; 陈俊杉 [15%]; 陈维 [15%]; 严翔宇 [15%]; 杨溢 [15%] | 3h | 3h | 课程ppt要求 | 软件安装完毕 |
| 6 | 1.2 | **项目计划** |  | 3d | 2018-09-27 08:00 A | 2018-10-16 20:00 |  | 100% |  |  | 2018-10-08 20:45 |  |  |  | 40h | 40h |  |  |
| 7 | 1.2.1 | 可行性分析 |  | 3h | 2018-09-28 08:00 A | 2018-09-28 11:00 A | 3 | 100% |  |  |  |  |  | 严翔宇 | 3h | 3h | 项目要求，环境因素 | 可行性分析初稿 |
| 8 | 1.2.2 | 甘特图初稿 |  | 3h | 2018-09-27 08:00 A | 2018-09-27 11:00 A | 3 | 100% |  |  |  |  |  | 杨溢 | 3h | 3h | 课程里程碑安排，项目计划 | 甘特图初稿 |
| 9 | 1.2.3 | 第一次ppt模板查找编写 |  | 4h | 2018-09-27 08:00 A | 2018-09-27 12:00 A | 3 | 100% |  |  |  |  |  | 陈安侍 | 4h | 4h | ppt模板，大致项目计划 | 项目计划ppt |
| 10 | 1.2.4 | 计划ppt修改 |  | 3h | 2018-09-27 09:00 A | 2018-09-27 12:00 A | 9 | 100% |  |  |  |  |  | 陈维 | 3h | 3h | 项目计划ppt初稿 | 项目计划ppt第一次修订 |
| 11 | 1.2.5 | 创建wbs |  | 2h | 2018-09-30 19:30 A | 2018-10-08 20:45 A | 4 | 100% |  |  |  |  | finish no earlier than 2018-09-30 20:00 | 陈维 | 2h | 2h | 项目文件，环境因素 | 范围基准，WBS |
| 12 | 1.2.6 | 人力资源与预算 |  | 3h | 2018-09-27 09:00 A | 2018-09-27 12:00 A | 3 | 100% |  |  |  |  |  | 陈俊杉 | 3h | 3h | 环境因素，资产 | 预算 |
| 13 | 1.2.7 | 创建OBS | manual | 1h | 2018-09-30 19:30 A | 2018-09-30 20:45 A | 3, 4 | 100% |  |  |  |  |  | 陈维 | 1h | 1h | 会议对人员安排结果 | OBS结构 |
| 14 | 1.2.8 | github创建 提交文档 |  | 5h | 2018-09-28 08:00 A | 2018-09-28 14:00 A | 3 | 100% |  |  |  |  |  | 杨溢 | 5h | 5h | 人员组织结构 | 创建分支 |
| 15 | 1.2.9 | 需求工程项目计划书编写 |  | 4h | 2018-09-28 08:00 A | 2018-09-28 12:00 A | 3, 11, 12, 13 | 100% |  |  |  |  |  | 严翔宇 | 4h | 4h | 项目章程，计划模板 | 需求工程项目计划书初稿 |
| 16 | 1.2.10 | 项目计划书模板查找 修改 |  | 4h | 2018-09-28 08:00 A | 2018-09-28 14:00 A | 3 | 100% |  |  |  |  |  | 陈俊杉 | 4h | 4h | 模板 | 计划书框架 |
| 17 | 1.2.11 | 项目计划书编写 |  | 4h | 2018-09-28 08:00 A | 2018-09-28 12:00 A | 16, 12, 11, 13 | 100% |  |  |  |  |  | 严翔宇 | 4h | 4h | 计划书框架 | 项目计划书初稿 |
| 18 | 1.2.12 | 制定项目管理计划 |  | 3h | 2018-09-27 19:30 A | 2018-09-29 20:45 A | 3, 4 | 100% |  |  |  |  |  | 陈安侍 | 3h | 3h | 项目章程，其他过程的输出，环境因素 | 项目管理计划初稿 |
| 19 | 1.2.13 | 第二次小组会议 |  | 1h | 2018-09-29 08:00 A | 2018-09-29 09:00 A | 3 | 100% |  |  |  |  | start no earlier than 2018-09-29 08:00 | 陈安侍 [40%]; 陈俊杉 [15%]; 陈维 [15%]; 严翔宇 [15%]; 杨溢 [15%] | 1h | 1h | 项目进度，计划任务 | 会议记录，团队绩效评价 |
| 20 | 1.2.14 | 国庆放假 |  | 5d | 2018-10-01 08:00 A | 2018-10-06 17:00 A |  | 100% |  |  |  |  | finish no earlier than 2018-10-07 20:00 |  |  |  |  |  |
| 21 | 1.3 | **UML知识搭建** |  | 7.31d | 2018-10-03 08:00 A | 2018-12-01 19:31 | 2 | 94% | 0.45d |  |  | 26.94d |  |  | 203h | 174.5h |  |  |
| 22 | 1.3.1 | 修订《项目可行性分析报告》 |  | 3h | 2018-10-03 08:00 A | 2018-10-03 11:00 A | 7 | 100% |  |  |  |  |  | 严翔宇 | 3h | 3h | 可行性分析报告初稿 | 可行性分析报告第一次修订 |
| 23 | 1.3.2 | UML绪论 |  | 3h | 2018-10-03 08:00 A | 2018-10-03 11:00 A | 3 | 100% |  |  |  |  |  | 陈安侍 | 3h | 3h | 软件需求知识 | UML绪论 |
| 24 | 1.3.3 | 第三次小组会议 |  | 1h | 2018-10-13 08:00 A | 2018-10-13 09:00 A | 19 | 100% |  |  |  |  |  | 陈安侍 [40%]; 陈俊杉 [15%]; 陈维 [15%]; 严翔宇 [15%]; 杨溢 [15%] | 1h | 1h | 项目进度，计划任务 | 会议记录，团队绩效评价 |
| 25 | 1.3.4 | 第一次team building |  | 2h | 2018-10-13 08:00 A | 2018-10-13 10:00 A | 24 | 100% |  |  |  |  |  | 陈安侍; 陈俊杉; 陈维; 严翔宇; 杨溢 | 10h | 10h | 资金 | 对同事的熟悉度提升 |
| 26 | 1.3.5 | 《需求工程计划-初步》提交 |  | 3h | 2018-10-10 08:00 A | 2018-10-10 11:00 A | 7 | 100% |  |  |  |  |  | 陈安侍 | 3h | 3h | 模板，项目章程，环境因素 | 需求工程计划初步 |
| 27 | 1.3.6 | 《项目总体计划》编写 |  | 3h | 2018-10-10 08:00 A | 2018-10-10 11:00 A | 7, 8 | 100% |  |  |  |  |  | 陈维 | 3h | 3h | 项目章程，里程碑要求，环境因素 | 项目总体计划初稿 |
| 28 | 1.3.7 | 需求工程计划书修改 |  | 4h | 2018-10-13 08:00 A | 2018-10-13 12:00 A | 15 | 100% |  |  |  |  |  | 陈安侍 | 4h | 4h | 需求工程计划书初稿 | 需求工程计划书第一次修订 |
| 29 | 1.3.8 | github分支修改 |  | 5h | 2018-10-13 08:00 A | 2018-10-13 14:00 A | 14 | 100% |  |  |  |  |  | 杨溢 | 5h | 5h | 原分支机构，项目要求 | 分支结构第一次更新 |
| 30 | 1.3.9 | UML概述 翻转 |  | 4h | 2018-10-10 08:00 A | 2018-10-10 12:00 A | 23 | 100% |  |  |  |  |  | 陈俊杉 | 4h | 4h | UML相关知识，ppt模板 | UML概述翻转ppt |
| 31 | 1.3.10 | 概述ppt修订 |  | 3h | 2018-10-12 08:00 A | 2018-10-12 11:00 A | 30 | 100% |  |  |  |  |  | 杨溢 | 3h | 3h | UML概述翻转ppt | UML概述翻转ppt第一次修订 |
| 32 | 1.3.11 | 甘特图修改 |  | 3h | 2018-10-10 08:00 A | 2018-10-10 11:00 A | 8 | 100% |  |  |  |  |  | 杨溢 | 3h | 3h | 项目进度，时间分配 | 甘特图修订 |
| 33 | 1.3.12 | 第四次小组会议 |  | 1h | 2018-10-20 08:00 A | 2018-10-20 09:00 A | 24 | 100% |  |  |  |  |  | 陈安侍 [40%]; 陈俊杉 [15%]; 陈维 [15%]; 严翔宇 [15%]; 杨溢 [15%] | 1h | 1h | 项目进度，计划任务 | 会议记录，团队绩效评价 |
| 34 | 1.3.13 | 《QA计划》提交 |  | 3h | 2018-10-17 08:00 A | 2018-10-17 11:00 A | 33 | 100% |  |  |  |  |  | 陈安侍 | 3h | 3h | 项目章程，项目管理计划，项目文件，环境因素 | 质量管理计划 |
| 35 | 1.3.14 | UML工具process on 翻转ppt |  | 3h | 2018-10-17 08:00 A | 2018-10-17 11:00 A | 30 | 100% |  |  |  |  |  | 陈俊杉 | 3h | 3h | 网页工具process on使用说明知识，ppt模板 | UML工具翻转ppt |
| 36 | 1.3.15 | process on 组内使用教学 |  | 3h | 2018-10-11 08:00 A | 2018-10-11 11:00 A | 30 | 100% |  |  |  |  |  | 陈安侍 | 3h | 3h | 熟练使用者，环境 | 成员熟悉使用 |
| 37 | 1.3.16 | 项目章程修改 |  | 3h | 2018-10-21 08:00 A | 2018-10-21 11:00 A | 4 | 100% |  |  |  |  |  | 陈安侍 | 3h | 3h | 项目章程初稿 | 项目章程第一次修订 |
| 38 | 1.3.17 | 第五次小组会议 |  | 1h | 2018-10-27 08:00 A | 2018-10-27 09:00 A | 33 | 100% |  |  |  |  |  | 陈安侍 [40%]; 陈俊杉 [15%]; 陈维 [15%]; 严翔宇 [15%]; 杨溢 [15%] | 1h | 1h | 项目进度，计划任务 | 会议记录，团队绩效评价 |
| 39 | 1.3.18 | 需求工程项目计划书修改 |  | 3h | 2018-10-27 08:00 A | 2018-10-27 11:00 A | 28 | 100% |  |  |  |  |  | 陈俊杉 | 3h | 3h | 需求工程项目计划书第一次修订版 | 需求工程项目计划书第二次修订 |
| 40 | 1.3.19 | 软件质量保证计划编写 |  | 3h | 2018-10-27 08:00 A | 2018-10-27 11:00 A | 38 | 100% |  |  |  |  |  | 陈安侍 | 3h | 3h | 项目章程，环境因素，项目管理计划 | 软件质量保证计划初稿 |
| 41 | 1.3.20 | UML 六种图翻转 用例图 类图 |  | 4h | 2018-10-29 08:00 A | 2018-10-29 12:00 A | 35 | 100% |  |  |  |  |  | 杨溢 | 4h | 4h | 用例图，类图相关知识，process on工具 | 翻转ppt相关部分 |
| 42 | 1.3.21 | UML 六种图翻转 状态图 顺序图 |  | 4h | 2018-10-18 08:00 A | 2018-10-18 12:00 A | 35 | 100% |  |  |  |  |  | 严翔宇 | 4h | 4h | 状态图，顺序图相关知识，process on工具 | 翻转ppt相关部分 |
| 43 | 1.3.22 | UML 六种图翻转 部署图 协作图 |  | 4h | 2018-10-18 08:00 A | 2018-10-18 12:00 A | 35 | 100% |  |  |  |  |  | 陈维 | 4h | 4h | 部署图，协作图，process on工具 | 翻转ppt相关部分 |
| 44 | 1.3.23 | UML六图ppt修订 |  | 3h | 2018-10-19 08:00 A | 2018-10-19 11:00 A | 43 | 100% |  |  |  |  |  | 严翔宇 | 3h | 3h | 三个翻转ppt相关部分 | UML六图翻转ppt |
| 45 | 1.3.24 | 第六次小组会议 |  | 1h | 2018-11-03 08:00 A | 2018-11-03 09:00 A | 38 | 100% |  |  |  |  |  | 陈安侍 [40%]; 陈俊杉 [15%]; 陈维 [15%]; 严翔宇 [15%]; 杨溢 [15%] | 1h | 1h | 项目进度，计划任务 | 会议记录，团队绩效评价 |
| 46 | 1.3.25 | 甘特图更新 |  | 4h | 2018-11-04 08:00 A | 2018-11-04 12:00 A | 45 | 100% |  |  |  |  |  | 杨溢 | 4h | 4h | 项目进度 | 进程调整 |
| 47 | 1.3.26 | 项目章程修改 |  | 3h | 2018-11-04 08:00 A | 2018-11-04 11:00 A | 37 | 100% |  |  |  |  |  | 陈安侍 | 3h | 3h | 项目章程第一次修订版 | 项目章程第二次修订 |
| 48 | 1.3.27 | 需求计划修改 |  | 4h | 2018-11-04 08:00 A | 2018-11-04 12:00 A | 39 | 100% |  |  |  |  |  | 陈俊杉 | 4h | 4h | 需求工程项目计划书第二次修订版 | 需求工程项目计划书第三次修订 |
| 49 | 1.3.28 | 项目计划书修改 |  | 4h | 2018-11-04 08:00 A | 2018-11-04 12:00 A | 16 | 100% |  |  |  |  |  | 严翔宇 | 4h | 4h | 项目计划书初稿 | 项目计划书第一次修订 |
| 50 | 1.3.29 | UML界面原型 翻转 |  | 3h | 2018-11-03 08:00 A | 2018-11-03 11:00 A | 41 | 100% |  |  |  |  |  | 陈维 | 3h | 3h | RP-UML相关界面原型知识 | UML界面原型翻转ppt初稿 |
| 51 | 1.3.30 | 界面原型ppt修订 |  | 3h | 2018-11-10 08:00 A | 2018-11-10 11:00 A | 50 | 100% |  |  |  |  |  | 陈维 | 3h | 3h | UML界面原型翻转ppt初稿 | uml界面原型翻转ppt修订 |
| 52 | 1.3.31 | 组内界面原型软件教学 |  | 3h | 2018-11-11 08:00 A | 2018-11-11 11:00 A | 50 | 100% |  |  |  |  |  | 陈维 | 3h | 3h | RP使用相关知识 | 组员能够使用 |
| 53 | 1.3.32 | 里程碑ppt编写 |  | 3h | 2018-11-03 09:00 A | 2018-11-03 12:00 A | 45 | 100% |  |  |  |  |  | 陈安侍 | 3h | 3h | 项目进度，项目章程，里程碑要求 | 里程碑ppt初稿 |
| 54 | 1.3.33 | 第七次小组会议 |  | 1h | 2018-11-10 08:00 A | 2018-11-10 09:00 A | 45 | 100% |  |  |  |  |  | 陈安侍 [40%]; 陈俊杉 [15%]; 陈维 [15%]; 严翔宇 [15%]; 杨溢 [15%] | 1h | 1h | 项目进度，计划任务 | 会议记录，团队绩效评价 |
| 55 | 1.3.34 | 培训计划编写 |  | 4h | 2018-11-10 09:00 A | 2018-11-10 14:00 A | 54 | 100% |  |  |  |  |  | 严翔宇 | 4h | 4h | OBS结构，项目章程，环境因素 | 培训计划初稿 |
| 56 | 1.3.35 | 培训计划修订审核 |  | 2h | 2018-11-11 08:00 A | 2018-11-11 10:00 A | 55 | 100% |  |  |  |  |  | 陈维 | 2h | 2h | 培训计划初稿 | 培训计划第一次修订 |
| 57 | 1.3.36 | obs结构修改 |  | 3h | 2018-11-10 09:00 A | 2018-11-10 12:00 A | 54 | 100% |  |  |  |  |  | 陈维 | 3h | 3h | OBS结构初稿 | OBS结构第一次修订 |
| 58 | 1.3.37 | wbs结构修改 |  | 3h | 2018-11-10 09:00 A | 2018-11-10 12:00 A | 54 | 100% |  |  |  |  |  | 陈维 | 3h | 3h | WBS结构初稿 | WBS结构第一次修订 |
| 59 | 1.3.38 | 甘特图修改对应 |  | 3h | 2018-11-10 09:00 A | 2018-11-10 12:00 A | 54 | 100% |  |  |  |  |  | 杨溢 | 3h | 3h | 项目进度，WBS结构最新版 | 甘特图与WBS结构结合 |
| 60 | 1.3.39 | 风险管理编写 |  | 4h | 2018-11-10 09:00 A | 2018-11-10 13:00 A | 54 | 100% |  |  |  |  |  | 陈俊杉 | 4h | 4h | 项目章程，项目文件，环境因素 | 风险管理计划 |
| 61 | 1.3.40 | 风险管理修改 |  | 2h | 2018-11-11 08:00 A | 2018-11-11 10:00 A | 60 | 100% |  |  |  |  |  | 陈安侍 | 2h | 2h | 风险管理计划初稿 | 风险管理计划第一次修订 |
| 62 | 1.3.41 | 版本配置管理 |  | 4h | 2018-11-18 08:00 A | 2018-11-18 12:00 A | 54 | 100% |  |  |  |  |  | 杨溢 | 4h | 4h | 分支结构 | 版本配置结构说明 |
| 63 | 1.3.42 | 需求计划书修改 |  | 3h | 2018-11-18 08:00 A | 2018-11-18 11:00 A | 49 | 100% |  |  |  |  |  | 陈安侍 | 3h | 3h | 需求工程项目计划书第二次修订版 | 需求工程项目计划书第三次修订 |
| 64 | 1.3.43 | 需求计划里程碑ppt修改 |  | 3h | 2018-11-18 08:00 A | 2018-11-18 11:00 A | 53 | 100% |  |  |  |  |  | 陈维 | 3h | 3h | 里程碑ppt初稿，最新相关文件 | 里程碑ppt第一次修订版 |
| 65 | 1.3.44 | 培训计划修改 |  | 4h | 2018-11-18 08:00 A | 2018-11-18 12:00 A | 56 | 100% |  |  |  |  |  | 严翔宇 | 4h | 4h | 培训计划第一次修订版 | 培训计划第二次修订 |
| 66 | 1.3.45 | 风险计划修改 |  | 3h | 2018-11-18 08:00 A | 2018-11-18 11:00 A | 61 | 100% |  |  |  |  |  | 陈俊杉 | 3h | 3h | 风险管理计划第一次修订版 | 风险管理计划第二次修订 |
| 67 | 1.3.46 | 第八次小组会议 |  | 1h | 2018-11-17 08:00 A | 2018-11-17 09:00 A | 54 | 100% |  |  |  |  |  | 陈安侍 [15%]; 陈俊杉 [15%]; 陈维 [15%]; 严翔宇 [15%]; 杨溢 [40%] | 1h | 1h | 项目进度，计划任务 | 会议记录，团队绩效评价 |
| 68 | 1.3.47 | 模板查找与替换 |  | 3h | 2018-11-24 08:00 A | 2018-11-24 11:00 A | 67 | 100% |  |  |  |  |  | 陈俊杉 | 3h | 3h | 新模板，相关文件 | 新框架 |
| 69 | 1.3.48 | 与发起人谈话 |  | 1h | 2018-11-22 08:00 A | 2018-11-22 09:00 A | 67 | 100% |  |  |  |  |  | 陈安侍; 陈俊杉; 陈维; 严翔宇; 杨溢 | 5h | 5h | 邀请函，问题列表 | 指导结果 |
| 70 | 1.3.49 | 新模板填写 |  | 3h | 2018-11-24 08:00 A | 2018-11-24 11:00 A | 69 | 100% |  |  |  |  |  | 严翔宇 | 3h | 3h | 新模板框架 | 相关文件 |

| ID | WBS | Task | Type | Duration | Start | Finish | Predecessors | Complete | Remaining | Actual start | Total slack | Free slack | Constraint | Resources | Work | Actual work | 输入 | 输出 |
| --- | --- | --- | --- | --- | --- | --- | --- | --- | --- | --- | --- | --- | --- | --- | --- | --- | --- | --- |
| 71 | 1.3.50 | 甘特图修改 |  | 4h | 2018-11-25 08:00 A | 2018-11-25 12:00 A | 69 | 100% |  |  |  |  |  | 杨溢 | 4h | 4h | 项目进度，Pmbok | 甘特图输入输出 |
| 72 | 1.3.51 | wbs结构大修订 |  | 3h | 2018-11-25 08:00 A | 2018-11-25 11:00 A | 69 | 100% |  |  |  |  |  | 陈维 | 3h | 3h | 项目阶段 | WBS结构第二次修订 |
| 73 | 1.3.52 | 里程碑ppt修订 |  | 2h | 2018-11-25 08:00 A | 2018-11-25 10:00 A | 69 | 100% |  |  |  |  |  | 陈维 | 2h | 2h | 里程碑ppt第一次修订版 | 里程碑ppt第二次修订 |
| 74 | 1.3.53 | 计划文档修改 |  | 4h | 2018-11-25 08:00 A | 2018-11-25 12:00 A | 69 | 100% |  |  |  |  |  | 严翔宇 | 4h | 4h | 相关文件 | 相关文件 |
| 75 | 1.3.54 | 第九次小组会议 |  | 1h | 2018-11-24 08:00 A | 2018-11-24 09:00 A | 69 | 100% |  |  |  |  |  | 陈安侍 [15%]; 陈俊杉 [15%]; 陈维 [15%]; 严翔宇 [15%]; 杨溢 [40%] | 1h | 1h | 项目进度，计划任务 | 会议记录，团队绩效评价 |
| 76 | 1.3.55 | 组内模拟评审 |  | 2h | 2018-11-26 08:00 A | 2018-11-26 10:00 A | 75 | 100% |  |  |  |  |  | 陈安侍 [40%]; 陈俊杉 [15%]; 陈维 [15%]; 严翔宇 [15%]; 杨溢 [15%] | 2h | 2h | 里程碑ppt与相关文件 | 修改要求 |
| 77 | 1.3.56 | 阶段评审1 | milestone, manual | 1h | 2018-11-28 08:00 | 2018-11-28 09:00 | 71, 74, 73, 72, 76 |  |  |  |  |  |  | 陈安侍 [40%]; 陈俊杉 [15%]; 陈维 [15%]; 严翔宇 [15%]; 杨溢 [15%] | 1h |  | 里程碑ppt与相关文件 | 修改要求 |
| 78 | 1.3.57 | 检查项目 | manual | 4h | 2018-11-28 08:00 | 2018-11-28 12:00 | 75 |  |  |  |  |  |  | 严翔宇 | 4h |  | 相关文件 | 修改要求 |
| 79 | 1.3.58 | 第十次小组会议 |  | 1h | 2018-11-30 19:30 | 2018-11-30 20:45 | 77 |  |  |  | -0.12d | 0d | start no earlier than 2018-11-30 08:00 | 陈安侍 [15%]; 陈俊杉 [15%]; 陈维 [15%]; 严翔宇 [15%]; 杨溢 [40%] | 1h |  | 项目进度，计划任务 | 会议记录，团队绩效评价 |
| 80 | 1.3.59 | 第二次team building |  | 5h | 2018-12-01 08:00 A | 2018-12-01 19:31 | 79 | 10% | 4.5h |  | 26.94d |  |  | 陈安侍; 陈俊杉; 陈维; 严翔宇; 杨溢 | 25h | 2.5h | 预算 | 增进团队感情，增加工作激情 |
| 81 | 1.4 | **项目执行** |  | 24.37d | 2018-11-28 08:00 A | 2019-01-18 20:00 | 6 | 42% | 14.04d |  | 3.5d |  |  |  | 323.5h | 147h |  |  |
| 82 | 1.4.1 | **需求开发** |  | 26.19d | 2018-11-28 08:00 | 2019-01-18 20:00 | 79 | 48% | 13.64d | 2018-11-30 08:00 |  |  |  |  | 214.5h | 105h |  |  |
| 83 | 1.4.1.1 | **需求获取** |  | 1d | 2018-12-01 19:30 A | 2018-12-09 19:30 | 79 | 79% | 0.21d |  | 25.94d |  |  |  | 43.5h | 36h |  |  |
| 84 | 1.4.1.1.1 | 项目视图和范围初稿 |  | 4h | 2018-12-01 19:30 A | 2018-12-04 20:45 A | 79 | 100% |  |  |  |  |  | 陈安侍 | 4h | 4h | 需求工程项目计划书，需求内容 | 范围文件 |
| 85 | 1.4.1.1.2 | 确定开发过程 |  | 4h | 2018-12-01 19:30 A | 2018-12-04 20:45 A | 79 | 100% |  |  |  |  |  | 杨溢 | 4h | 4h | 需求内容，环境因素 | 开发过程文件 |
| 86 | 1.4.1.1.3 | 用户分类 |  | 3h | 2018-12-05 19:30 A | 2018-12-07 20:45 A | 84 | 100% |  |  |  |  |  | 严翔宇 | 3h | 3h | 需求内容，环境因素 | 用户分类表 |
| 87 | 1.4.1.1.4 | 用户工作流程分析 |  | 3h | 2018-12-05 19:30 A | 2018-12-07 20:45 A | 84 | 100% |  |  |  |  |  | 严翔宇 | 3h | 3h | 需求内容 | 相关文件 |
| 88 | 1.4.1.1.5 | 检查问题报告 |  | 4h | 2018-12-01 19:30 A | 2018-12-04 20:45 A | 79 | 100% |  |  |  |  |  | 陈俊杉 | 4h | 4h | 需求工程项目计划书 | 问题报告 |
| 89 | 1.4.1.1.6 | 界面原型草稿 |  | 4h | 2018-12-01 19:30 A | 2018-12-04 20:45 A | 79 | 100% |  |  |  |  |  | 陈俊杉 | 4h | 4h | 需求内容 | 界面原型初稿 |
| 90 | 1.4.1.1.7 | 项目试图和范围编写确认 |  | 1h | 2018-12-04 19:30 A | 2018-12-04 20:45 A | 79 | 100% |  |  |  |  | start no earlier than 2018-12-04 08:00 | 陈安侍; 陈俊杉; 陈维; 严翔宇; 杨溢 | 5h | 5h | 邀请函，问题列表 | 修改意见 |
| 91 | 1.4.1.1.8 | 界面原型修改 |  | 4.5h | 2018-12-05 19:30 A | 2018-12-09 19:30 | 90 | 44% | 2.5h |  | 25.94d |  |  | 陈俊杉 | 4.5h | 2h | 界面原型草稿 | 界面原型第一次修改 |
| 92 | 1.4.1.1.9 | 移动端界面原型 | manual | 5h | 2018-12-05 19:00 | 2018-12-08 10:00 | 90 |  |  |  |  |  |  | 陈维 | 5h |  | 初步需求 | 初步移动端界面原型 |
| 93 | 1.4.1.1.10 | 项目试图和范围修改 |  | 2h | 2018-12-05 19:30 A | 2018-12-06 20:45 A | 90 | 100% |  |  |  |  |  | 陈安侍 | 2h | 2h | 项目试图和范围初稿 | 项目试图和范围第二次修改 |
| 94 | 1.4.1.1.11 | 项目视图和范围第二次确认 |  | 1h | 2018-12-06 08:00 A | 2018-12-06 09:00 A | 90 | 100% |  |  |  |  |  | 陈安侍; 陈俊杉; 陈维; 严翔宇; 杨溢 | 5h | 5h | 邀请函，问题列表 | 修改意见，界面原型意见 |
| 95 | 1.4.1.2 | 第十一次小组会议 |  | 1h | 2018-12-07 08:00 A | 2018-12-07 20:45 A | 79 | 100% |  |  |  |  | start no earlier than 2018-12-07 08:00 | 陈安侍 [15%]; 陈俊杉 [15%]; 陈维 [15%]; 严翔宇 [15%]; 杨溢 [40%] | 1h | 1h | 项目进度，计划任务 | 会议记录，团队绩效评价 |
| 96 | 1.4.1.3 | 界面原型第二次修改 |  | 2h | 2018-12-08 19:30 A | 2018-12-09 20:45 A | 95 | 100% |  |  |  |  | start no earlier than 2018-12-08 08:00 | 陈俊杉 | 2h | 2h | 界面原型第一次修改版 | 界面原型第二次修改 |
| 97 | 1.4.1.4 | 问卷调查设计 |  | 2h | 2018-12-08 19:30 A | 2018-12-09 09:00 A | 95 | 100% |  |  |  |  |  | 陈安侍 | 2h | 2h | 模板，相关问题 | 问卷 |
| 98 | 1.4.1.5 | 甘特图更新 |  | 2h | 2018-12-08 19:30 A | 2018-12-09 20:45 A | 95 | 100% |  |  |  |  |  | 杨溢 | 2h | 2h | 任务安排 | 甘特图更新 |
| 99 | 1.4.1.6 | SRS框架 |  | 2h | 2018-12-08 19:30 A | 2018-12-09 20:45 A | 95 | 100% |  |  |  |  |  | 陈安侍 | 2h | 2h | 模板 | SRS框架 |

| ID | WBS | Task | Type | Duration | Start | Finish | Predecessors | Complete | Actual start | Actual finish | Total slack | Free slack | Constraint | Resources | Work | Actual work | 输入 | 输出 |
| --- | --- | --- | --- | --- | --- | --- | --- | --- | --- | --- | --- | --- | --- | --- | --- | --- | --- | --- |
| 100 | 1.4.1.7 | **需求分析** |  | 3.69d | 2018-11-30 08:00 | 2018-12-15 11:00 | 95 | 100% | 2018-12-06 19:30 | 2018-12-14 20:45 |  |  |  |  | 38h | 38h |  |  |
| 101 | 1.4.1.7.1 | 关联图 |  | 4h | 2018-12-06 19:30 A | 2018-12-09 20:45 A | 84 | 100% |  |  |  |  | start no earlier than 2018-12-06 08:00 | 陈维 | 4h | 4h | 需求，关联图知识 | 关联图 |
| 102 | 1.4.1.7.2 | 开发原型 |  | 6h | 2018-12-08 19:30 A | 2018-12-13 20:45 A | 95 | 100% |  |  |  |  |  | 陈俊杉 | 6h | 6h | 界面原型第二次修订 | 界面原型第三次修订 |
| 103 | 1.4.1.7.3 | 可行性分析 |  | 5h | 2018-12-08 19:30 A | 2018-12-12 20:45 A | 95 | 100% |  |  |  |  |  | 陈维 | 5h | 5h | 环境因素，需求 | 需求可行性分析 |
| 104 | 1.4.1.7.4 | 需求优先级 |  | 5h | 2018-12-08 19:30 A | 2018-12-12 20:45 A | 95 | 100% |  |  |  |  |  | 严翔宇 | 5h | 5h | 需求，环境因素 | 需求优先级 |
| 105 | 1.4.1.7.5 | 需求模型 |  | 5h | 2018-12-08 19:30 A | 2018-12-12 20:45 A | 95 | 100% |  |  |  |  |  | 杨溢 | 5h | 5h | 需求建模要求 | 需求模型 |
| 106 | 1.4.1.7.6 | 数据字典 |  | 4h | 2018-12-08 19:30 A | 2018-12-11 20:45 A | 95 | 100% |  |  |  |  |  | 陈安侍 | 4h | 4h | 需求，数据 | 数据字典 |
| 107 | 1.4.1.7.7 | 质量功能调配 |  | 5h | 2018-12-08 19:30 A | 2018-12-12 20:45 A | 95 | 100% |  |  |  |  |  | 陈维 | 5h | 5h | 环境因素，需求 | 相关文件 |
| 108 | 1.4.1.7.8 | 确定质量属性 |  | 4h | 2018-12-11 19:30 A | 2018-12-14 20:45 A | 95 | 100% |  |  |  |  | start no earlier than 2018-12-11 08:00 | 陈维 | 4h | 4h | 需求内容 | 相关文件 |
| 109 | 1.4.1.8 | 第十二次小组会议 |  | 1h | 2018-12-14 19:00 | 2018-12-14 20:15 | 95 |  |  |  | 5.38d | 0d | start no earlier than 2018-12-14 08:00 | 陈安侍 [15%]; 陈俊杉 [15%]; 陈维 [15%]; 严翔宇 [15%]; 杨溢 [40%] | 1h |  | 项目进度，计划任务 | 会议记录，团队绩效评价 |
| 110 | 1.4.1.9 | 游客用户访谈 | manual | 1h | 2018-12-15 08:00 | 2018-12-15 09:00 | 95 |  |  |  |  |  |  | 陈安侍; 陈俊杉; 陈维; 严翔宇; 杨溢 | 5h |  | 邀请函，问题列表，界面原型 | 游客需求 |
| 111 | 1.4.1.10 | 教师用户访谈 | manual | 1h | 2018-12-15 19:00 | 2018-12-15 20:15 | 110 |  |  |  |  |  |  | 陈安侍 [40%]; 陈俊杉 [15%]; 陈维 [15%]; 严翔宇 [15%]; 杨溢 [15%] | 1h |  | 邀请函，问题列表，界面原型 | 教师用户需求 |
| 112 | 1.4.1.11 | 前端界面原型修改 | manual | 4h | 2018-12-16 19:30 | 2018-12-17 10:00 | 111 |  |  |  |  |  |  | 陈俊杉 | 4h |  | 前端界面原型 | 前端界面原型修订 |
| 113 | 1.4.1.12 | 移动端界面原型修改 | manual | 4h | 2018-12-16 19:30 | 2018-12-17 10:00 | 111 |  |  |  |  |  |  | 陈维 | 4h |  | 移动端界面原型 | 移动端界面原型修订 |
| 114 | 1.4.1.13 | 软工专业用户访谈 | manual | 1h | 2018-12-21 08:00 | 2018-12-21 09:00 | 111 |  |  |  |  |  |  | 陈安侍 [40%]; 陈俊杉 [15%]; 陈维 [15%]; 严翔宇 [15%]; 杨溢 [15%] | 1h |  | 邀请函，问题列表，界面原型 | 软工学生用户需求 |
| 115 | 1.4.1.14 | 计算专业用户访谈 |  | 1h | 2018-12-21 09:00 | 2018-12-21 10:00 | 114 |  |  |  | 19d | 0d |  | 陈安侍 [40%]; 陈俊杉 [15%]; 陈维 [15%]; 严翔宇 [15%]; 杨溢 [15%] | 1h |  | 邀请函，问题列表，界面原型 | 计算学生用户需求 |
| 116 | 1.4.1.15 | 管理员用户访谈 | manual | 1h | 2018-12-21 10:00 | 2018-12-21 11:00 | 115 |  |  |  |  |  |  | 陈安侍 [40%]; 陈俊杉 [15%]; 陈维 [15%]; 严翔宇 [15%]; 杨溢 [15%] | 1h |  | 邀请函，问题列表，界面原型 | 管理员需求 |
| 117 | 1.4.1.16 | 管理员后台界面原型修改 | manual | 3h | 2018-12-21 11:00 | 2018-12-21 15:00 | 116 |  |  |  |  |  |  | 陈俊杉 | 3h |  | 管理员后台界面原型 | 管理员后台界面原型修订 |
| 118 | 1.4.1.17 | 教师用户第一次确认 | manual | 1h | 2018-12-21 11:00 | 2018-12-21 12:00 | 116 |  |  |  |  |  |  | 陈安侍 [40%]; 陈俊杉 [15%]; 陈维 [15%]; 严翔宇 [15%]; 杨溢 [15%] | 1h |  | 邀请函，问题列表，界面原型 | 界面原型 |
| 119 | 1.4.1.18 | 管理员第一次确认 | manual | 1h | 2018-12-21 15:00 | 2018-12-21 16:00 | 117 |  |  |  |  |  |  | 陈安侍 [40%]; 陈俊杉 [15%]; 陈维 [15%]; 严翔宇 [15%]; 杨溢 [15%] | 1h |  | 邀请函，问题列表，界面原型 | 修改要求 |
| 120 | 1.4.1.19 | 前端界面原型修改 | manual | 4h | 2018-12-21 13:00 | 2018-12-21 17:00 | 118 |  |  |  |  |  |  | 陈俊杉 | 4h |  | 需求，前端界面原型修订版 | 前端界面原型再修订 |
| 121 | 1.4.1.20 | 移动端界面原型再修改 | manual | 4h | 2018-12-21 13:00 | 2018-12-21 17:00 | 118 |  |  |  |  |  |  | 陈维 | 4h |  | 需求，移动端界面原型修订版 | 需求，移动端界面原型修订 |
| 122 | 1.4.1.21 | 管理员后台界面原型修改 | manual | 4h | 2018-12-21 16:00 | 2018-12-22 11:00 | 119 |  |  |  |  |  |  | 陈俊杉 | 4h |  | 需求，管理员后台界面原型修订版 | 管理员后台界面原型再修订 |
| 123 | 1.4.1.22 | 教师用户第二次确认 | manual | 1h | 2018-12-25 08:00 | 2018-12-25 09:00 | 120, 121 |  |  |  |  |  |  | 陈安侍 [40%]; 陈俊杉 [15%]; 陈维 [15%]; 严翔宇 [15%]; 杨溢 [15%] | 1h |  | 总体界面原型 | 确认通过 |
| 124 | 1.4.1.23 | 管理员用户第二次确认 | manual | 1h | 2018-12-27 08:00 | 2018-12-27 09:00 | 122 |  |  |  |  |  |  | 陈安侍 [40%]; 陈俊杉 [15%]; 陈维 [15%]; 严翔宇 [15%]; 杨溢 [15%] | 1h |  | 管理员界面原型+前端部分 | 确认通过 |
| 125 | 1.4.1.24 | QFD打分表 |  | 3h | 2018-12-27 09:00 | 2018-12-27 12:00 | 123, 124 |  |  |  | 14.38d |  |  | 严翔宇 | 3h |  | 模板，需求 | 打分表 |
| 126 | 1.4.1.25 | JAD会议 | manual | 1h | 2019-01-03 08:00 | 2019-01-03 09:00 | 118 |  |  |  |  |  |  | 陈安侍 [40%]; 陈俊杉 [15%]; 陈维 [15%]; 严翔宇 [15%]; 杨溢 [15%] | 1h |  | 邀请函，冲突问题列表，界面原型 | 需求冲突解决方案 |

| ID | WBS | Task | Type | Duration | Start | Finish | Predecessors | Complete | Total slack | Constraint | Resources | Work | Actual work | 输入 | 输出 |
| --- | --- | --- | --- | --- | --- | --- | --- | --- | --- | --- | --- | --- | --- | --- | --- |
| 127 | 1.4.1.26 | **需求规范** |  | 16d | 2018-12-15 19:00 | 2019-01-05 10:00 | 100 |  | 5.38d |  |  | 60h |  |  |  |
| 128 | 1.4.1.26.1 | 采用模板 |  | 3h | 2018-12-15 19:00 | 2018-12-16 21:45 | 109 |  | 24.88d |  | 陈安侍 | 3h |  | 模板 | 模板框架 |
| 129 | 1.4.1.26.2 | 记录需求来源 |  | 5h | 2018-12-15 19:00 | 2018-12-17 10:00 | 109 |  | 24.62d |  | 陈俊杉 | 5h |  | 获取需求结果 | 记录文件 |
| 130 | 1.4.1.26.3 | 编号标注 |  | 5h | 2018-12-15 19:00 | 2018-12-17 10:00 | 109 |  | 24.62d |  | 陈维 | 5h |  | 相关需求 | 标注后相关需求 |
| 131 | 1.4.1.26.4 | 记录业务规范 |  | 4h | 2018-12-15 19:00 | 2018-12-17 09:00 | 109 |  | 24.75d |  | 杨溢 | 4h |  | 业务规范要求 | 记录结果 |
| 132 | 1.4.1.26.5 | 需求跟踪能力矩阵 |  | 4h | 2018-12-15 19:00 | 2018-12-17 09:00 | 109 |  | 24.75d |  | 严翔宇 | 4h |  | 需求，相关知识 | 需求跟踪能力矩阵 |
| 133 | 1.4.1.26.6 | **《软件需求规格说明书》编写** |  | 10.62d | 2018-12-22 08:00 | 2019-01-05 10:00 | 109 |  | 0d |  |  | 39h |  | 模板，需求相关文件 | 软件需求规格说明书初稿 |
| 134 | 1.4.1.26.6.1 | 对话框图的添加 |  | 7h | 2018-12-22 08:00 | 2018-12-22 16:00 | 111 |  | 19d | start no earlier than 2018-12-22 08:00 | 杨溢 | 7h |  | 界面原型 | 对话框图 |
| 135 | 1.4.1.26.6.2 | 用例的添加 |  | 7h | 2018-12-22 08:00 | 2018-12-22 16:00 | 111 |  | 19d | start no earlier than 2018-12-22 08:00 | 陈维 | 7h |  | 用户需求 | 用户用例 |
| 136 | 1.4.1.26.6.3 | 数据字典添加 |  | 5h | 2018-12-22 08:00 | 2018-12-22 14:00 | 111 |  | 19.25d | start no earlier than 2018-12-22 08:00 | 陈安侍 | 5h |  | 用例 | 数据字典 |
| 137 | 1.4.1.26.6.4 | 需求优先级添加 | manual | 5h | 2018-12-22 08:00 | 2018-12-22 14:00 | 111 |  |  |  | 严翔宇 | 5h |  | 需求权重 | 需求优先级打分 |
| 138 | 1.4.1.26.6.5 | 界面原型添加 | manual | 5h | 2018-12-22 08:00 | 2018-12-22 14:00 | 111 |  |  |  | 杨溢 | 5h |  | 界面原型 | 模块截图 |
| 139 | 1.4.1.26.6.6 | 《软件需求规格说明书》修改 |  | 4h | 2018-12-29 08:00 | 2018-12-29 12:00 | 111 |  | 12.38d | start no earlier than 2018-12-29 08:00 | 杨溢 | 4h |  | 软件需求规格说明书初稿 | 软件需求规格说明书第一次修订 |
| 140 | 1.4.1.26.6.7 | 图编号 | manual | 2h | 2018-12-22 08:00 | 2018-12-22 10:00 | 111 |  |  |  | 杨溢 | 2h |  | SRS中图片 | 图片编号 |
| 141 | 1.4.1.26.6.8 | 数据字典标明来源 | manual | 2h | 2018-12-22 08:00 | 2018-12-22 10:00 | 111 |  |  |  | 陈安侍 | 2h |  | 数据字典，来源 | 标有来源数据字典 |
| 142 | 1.4.1.26.6.9 | 添加链接 | manual | 2h | 2019-01-05 08:00 | 2019-01-05 10:00 | 111 |  |  |  | 陈安侍 | 2h |  | 内容 | 带链接内容 |
| 143 | 1.4.1.27 | 第十三次小组会议 |  | 1h | 2018-12-21 08:00 | 2018-12-21 09:00 | 109 |  | 20.75d | start no earlier than 2018-12-21 08:00 | 陈安侍 [15%]; 陈俊杉 [15%]; 陈维 [15%]; 严翔宇 [15%]; 杨溢 [40%] | 1h |  | 项目进度，计划任务 | 会议记录，团队绩效评价 |
| 144 | 1.4.1.28 | **需求验证** |  | 6.12d | 2018-12-22 19:30 A | 2018-12-29 09:00 A | 127 | 100% |  |  |  | 22h | 22h |  |  |
| 145 | 1.4.1.28.1 | 审查需求文档 |  | 5h | 2018-12-22 19:30 A | 2018-12-26 20:45 A | 143 | 100% |  |  | 杨溢 | 5h | 5h | 需求文档 | 修改要求 |
| 146 | 1.4.1.28.2 | 编写测试用例 |  | 5h | 2018-12-22 19:30 A | 2018-12-26 20:45 A | 143 | 100% |  |  | 陈维 | 5h | 5h | 需求功能 | 测试用例 |
| 147 | 1.4.1.28.3 | 编写用户手册 |  | 6h | 2018-12-22 19:30 A | 2018-12-27 20:45 A | 143 | 100% |  |  | 严翔宇 | 6h | 6h | 界面原型，模板 | 用户手册 |
| 148 | 1.4.1.28.4 | 确定合格标准 |  | 5h | 2018-12-22 19:30 A | 2018-12-26 20:45 A | 143 | 100% |  |  | 陈安侍 | 5h | 5h | 标准，文件 | 合格结果 |
| 149 | 1.4.1.28.5 | 第十四次小组会议 | manual | 1h | 2018-12-29 08:00 A | 2018-12-29 09:00 A | 143 | 100% |  |  | 陈安侍 [15%]; 陈俊杉 [15%]; 陈维 [15%]; 严翔宇 [15%]; 杨溢 [40%] | 1h | 1h | 项目进度，计划任务 | 会议记录，团队绩效评价 |
| 150 | 1.4.2 | **UML+** |  | 17.88d | 2018-12-05 08:00 A | 2019-01-09 20:45 A | 50 | 100% |  |  |  | 42h | 42h |  |  |
| 151 | 1.4.2.1 | UML对象图ppt素材提供 |  | 4h | 2018-12-05 19:30 A | 2018-12-08 20:45 A | 152 | 100% |  |  | 陈俊杉 | 4h | 4h | ppt素材 | ppt框架 |
| 152 | 1.4.2.2 | UML对象图等 翻转 |  | 4h | 2018-12-05 08:00 A | 2018-12-05 12:00 A | 50 | 100% |  |  | 陈安侍 | 4h | 4h | UML对象图知识，ppt框架 | 对象图翻转ppt初稿 |
| 153 | 1.4.2.3 | UML对象图ppt修订 |  | 4h | 2018-12-05 19:30 A | 2018-12-08 20:45 A | 152 | 100% |  |  | 陈俊杉 | 4h | 4h | 对象图翻转ppt初稿 | 对象图翻转ppt第一次修订 |
| 154 | 1.4.2.4 | UML应用与解答ppt素材提供 |  | 5h | 2018-12-05 19:30 A | 2018-12-09 20:45 A | 152 | 100% |  |  | 严翔宇 | 5h | 5h | ppt素材 | ppt框架 |
| 155 | 1.4.2.5 | UML应用与解答 翻转 |  | 4h | 2018-12-10 19:30 A | 2018-12-12 10:00 A | 154 | 100% |  |  | 陈俊杉 | 4h | 4h | 相关知识，ppt框架 | 应用与解答ppt初稿 |
| 156 | 1.4.2.6 | UML应用与解答ppt修订 |  | 4h | 2018-12-12 19:30 A | 2018-12-15 20:45 A | 155 | 100% |  |  | 陈俊杉 | 4h | 4h | 应用与解答ppt初稿 | 应用与解答ppt第一次修订 |
| 157 | 1.4.2.7 | UML知识测试 |  | 3h | 2018-12-12 19:30 A | 2018-12-14 20:45 A | 155 | 100% |  |  | 陈安侍; 陈俊杉; 陈维; 严翔宇; 杨溢 | 15h | 15h | UML知识 | 测试结果 |
| 158 | 1.4.2.8 | 第十五次小组会议 |  | 1h | 2019-01-07 19:30 A | 2019-01-07 20:45 A | 149 | 100% |  | start no earlier than 2019-01-04 08:00 | 陈安侍 [15%]; 陈俊杉 [15%]; 陈维 [15%]; 严翔宇 [15%]; 杨溢 [40%] | 1h | 1h | 项目进度，计划任务 | 会议记录，团队绩效评价 |
| 159 | 1.4.2.9 | 阶段评审2SRS | milestone | 1h | 2019-01-09 08:00 A | 2019-01-09 20:45 A | 145, 146, 147, 148, 156, 157 | 100% |  | start no earlier than 2019-01-03 08:00 | 陈安侍 [40%]; 陈俊杉 [15%]; 陈维 [15%]; 严翔宇 [15%]; 杨溢 [15%] | 1h | 1h | 里程碑ppt与相关文件 | 修改要求 |

| ID | WBS | Task | Type | Duration | Start | Finish | Predecessors | Total slack | Free slack | Constraint | Resources | Work | 输入 | 输出 |
| --- | --- | --- | --- | --- | --- | --- | --- | --- | --- | --- | --- | --- | --- | --- |
| 160 | 1.4.3 | **需求管理** |  | 1.31d | 2019-01-08 19:30 | 2019-01-13 11:00 | 144 | 0d |  |  |  | 67h |  |  |
| 161 | 1.4.3.1 | 确定变更控制过程 |  | 5h | 2019-01-08 19:30 | 2019-01-11 21:45 | 158 | 8.25d |  |  | 陈维 | 5h | 变更发布要求 | 变更控制过程 |
| 162 | 1.4.3.2 | 与发布者沟通 | manual | 1h | 2019-01-08 19:30 | 2019-01-08 20:45 | 158 |  |  |  | 陈安侍 | 1h | 变更方案请求 | 变更方案确认 |
| 163 | 1.4.3.3 | 变更影响分析 |  | 5h | 2019-01-08 19:30 | 2019-01-11 21:45 | 158 | 8.25d |  |  | 杨溢 | 5h | 环境因素，变更 | 分析结果 |
| 164 | 1.4.3.4 | 跟踪变更 |  | 5h | 2019-01-08 19:30 | 2019-01-11 21:45 | 158 | 8.25d |  |  | 陈俊杉 | 5h | 变更，跟踪要求 | 跟踪结果 |
| 165 | 1.4.3.5 | 需求文档基准与控制版本的编写 |  | 5h | 2019-01-08 19:30 | 2019-01-11 21:45 | 158 | 8.25d |  |  | 陈安侍 | 5h | 模板 | 需求文档基准 |
| 166 | 1.4.3.6 | 界面原型更新(轮播图) |  | 2h | 2019-01-08 19:30 | 2019-01-09 20:45 | 158 | 8.38d | 0d | start no earlier than 2019-01-08 08:00 | 陈俊杉 | 2h | 界面原型 | 界面原型变更版 |
| 167 | 1.4.3.7 | SRS更新 |  | 2h | 2019-01-10 19:30 | 2019-01-11 20:30 | 166 | 8.38d |  |  | 杨溢 | 2h | 原SRS | 添加变更的SRS |
| 168 | 1.4.3.8 | 用例更新 |  | 2h | 2019-01-10 19:30 | 2019-01-11 20:30 | 166 | 8.38d |  |  | 陈维 | 2h | 原用例 | 添加变更用例 |
| 169 | 1.4.3.9 | 测试用例更新 |  | 2h | 2019-01-10 19:30 | 2019-01-11 20:30 | 166 | 8.38d |  |  | 严翔宇 | 2h | 原测试用例 | 添加变更测试用例 |
| 170 | 1.4.3.10 | 用户手册更新 |  | 2h | 2019-01-10 19:30 | 2019-01-11 20:30 | 166 | 8.38d |  |  | 严翔宇 | 2h | 原用户手册 | 添加变更用户手册 |
| 171 | 1.4.3.11 | CCB章程发布 | manual | 2h | 2019-01-10 19:30 | 2019-01-11 20:30 | 166 |  |  |  | 陈安侍 | 2h | 章程模板，人选 | CCB章程 |
| 172 | 1.4.3.12 | CCB确认 |  | 1h | 2019-01-10 19:30 | 2019-01-10 20:45 | 166 | 8.5d |  |  | 陈安侍 | 1h | 变更申请 | 申请通过 |
| 173 | 1.4.3.13 | 需求变更ppt |  | 2h | 2019-01-09 19:30 | 2019-01-10 20:45 | 162 | 8d | 0d |  | 陈安侍 | 2h | 变更评审表 | 变更评审ppt |
| 174 | 1.4.3.14 | 维护变更的历史记录 |  | 6h | 2019-01-08 19:30 | 2019-01-11 22:45 | 158 | 8.12d |  |  | 陈维 | 6h | 维护变更情况 | 记录结果 |
| 175 | 1.4.3.15 | 跟踪需求状态 |  | 5h | 2019-01-08 19:30 | 2019-01-11 21:45 | 158 | 8.25d |  |  | 杨溢 | 5h | 需求状态，跟踪要求 | 跟踪结果 |
| 176 | 1.4.3.16 | 衡量需求稳定性 |  | 6h | 2019-01-08 19:30 | 2019-01-11 22:45 | 158 | 8.12d |  |  | 陈俊杉 | 6h | 需求衡量，模板 | 衡量结果 |
| 177 | 1.4.3.17 | 使用需求管理工具 |  | 5h | 2019-01-08 19:30 | 2019-01-11 21:45 | 158 | 8.25d |  | finish no earlier than 2019-01-10 20:00 | 陈安侍 | 5h | 管理工具，使用说明 | 掌握使用 |
| 178 | 1.4.3.18 | 组内需求变更评审 |  | 1h | 2019-01-11 19:30 | 2019-01-11 20:30 | 173 | 8d | 0d |  | 陈安侍 [40%]; 陈俊杉 [15%]; 陈维 [15%]; 严翔宇 [15%]; 杨溢 [15%] | 1h | 变更评审ppt，相关变更文件 | 需要修正的条目 |
| 179 | 1.4.3.19 | 需求可行性分析更新 | manual | 3h | 2019-01-13 08:00 | 2019-01-13 11:00 | 178 |  |  |  | 严翔宇 | 3h | 需求可行性分析，变更需求 | 变更版需求可行性分析 |
| 180 | 1.4.3.20 | 需求优先级更新 | manual | 3h | 2019-01-11 20:45 | 2019-01-11 23:45 | 178 |  |  |  | 严翔宇 | 3h | 需求优先级，变更需求 | 变更版需求优先级 |
| 181 | 1.4.3.21 | 变更影响分析更新 | manual | 2h | 2019-01-13 08:00 | 2019-01-13 10:00 | 178 |  |  |  | 杨溢 | 2h | 变更影响分析，CCB | 变更影响分析修订 |
| 182 | 1.5 | **设计计划** |  | 3.31d | 2018-12-30 08:00 | 2019-01-10 20:00 |  |  |  |  |  | 19.5h |  |  |
| 183 | 1.5.1 | 系统设计与实现计划编写 |  | 6h | 2018-12-30 08:00 | 2018-12-30 17:00 | 149 | 11.12d |  |  | 陈安侍 | 6h | 模板，计划文件 | 系统设计与实行计划 |
| 184 | 1.5.2 | 软件概要设计说明 |  | 7.5h | 2019-01-01 08:00 | 2019-01-03 20:00 | 149 | 8.69d | 0.06d | finish no earlier than 2019-01-03 20:00 | 严翔宇 | 7.5h | 模板，环境因素，文件 | 软件概要设计说明初稿 |
| 185 | 1.5.3 | 概要设计说明修订 |  | 6h | 2019-01-04 19:30 | 2019-01-09 20:45 | 184 | 8.62d |  | start no earlier than 2019-01-04 08:00 | 陈安侍 | 6h | 软件概要设计说明初稿 | 软件概要设计说明最终版 |

| ID | WBS | Task | Duration | Start | Finish | Predecessors | Total slack | Free slack | Constraint | Resources | Work | 输入 | 输出 |
| --- | --- | --- | --- | --- | --- | --- | --- | --- | --- | --- | --- | --- | --- |
| 186 | 1.6 | **测试计划** | 1.25d | 2019-01-04 19:30 | 2019-01-11 22:45 |  | 8.12d |  |  |  | 10h |  |  |
| 187 | 1.6.1 | 测试计划编写 | 4h | 2019-01-04 19:30 | 2019-01-07 20:45 | 149 | 8.12d | 0d | start no earlier than 2019-01-04 08:00 | 陈俊杉 | 4h | 模板，环境因素，文件 | 测试计划初稿 |
| 188 | 1.6.2 | 测试计划修订 | 6h | 2019-01-08 19:30 | 2019-01-11 22:45 | 187 | 8.12d |  |  | 陈俊杉 | 6h | 测试计划初稿 | 测试计划最终版 |
| 189 | 1.7 | **部署计划** | 4.25d | 2019-01-04 08:00 | 2019-01-15 20:00 |  |  |  |  |  | 11h |  |  |
| 190 | 1.7.1 | 安装部署计划 | 5h | 2019-01-04 19:30 | 2019-01-08 20:45 | 149 | 8d | 0d | start no earlier than 2019-01-04 08:00 | 陈维 | 5h | 模板，环境因素，文件 | 部署计划初稿 |
| 191 | 1.7.2 | 部署计划修订 | 6h | 2019-01-09 19:30 | 2019-01-11 23:45 | 190 | 8d |  |  | 陈维 | 6h | 部署计划初稿 | 部署计划最终版 |
| 192 | 1.8 | **维护计划** | 3.12d | 2019-01-04 08:00 | 2019-01-12 20:00 |  |  |  |  |  | 7h |  |  |
| 193 | 1.8.1 | 系统维护计划 | 4h | 2019-01-04 19:30 | 2019-01-07 20:45 | 149 | 8.5d | 0d |  | 杨溢 | 4h | 模板，环境因素，文件 | 系统维护计划初稿 |
| 194 | 1.8.2 | 系统维护计划修订 | 3h | 2019-01-08 19:30 | 2019-01-10 20:45 | 193 | 8.5d |  |  | 杨溢 | 3h | 系统维护计划初稿 | 系统维护计划最终版 |
| 195 | 1.9 | **课堂作业讲评** | 1d | 2019-01-08 19:30 | 2019-01-12 11:30 |  | 6.88d |  |  |  | 15h |  |  |
| 196 | 1.9.1 | 计划文档改进 | 5h | 2019-01-08 19:30 | 2019-01-11 21:45 | 158 | 7d | 0d |  | 杨溢 | 5h | 相关计划文件 | 修订 |
| 197 | 1.9.2 | 需求文档改进 | 5h | 2019-01-08 19:30 | 2019-01-11 21:45 | 158 | 7d | 0d |  | 严翔宇 | 5h | 相关需求文件 | 修订 |
| 198 | 1.9.3 | 修改甘特图 | 3h | 2019-01-08 19:30 | 2019-01-10 20:45 | 158 | 7.25d | 0.25d | finish no earlier than 2019-01-10 20:00 | 杨溢 | 3h | 项目进度 | 甘特图更新 |
| 199 | 1.9.4 | 阶段评审3 需求变更评审 | 1h | 2019-01-11 21:45 | 2019-01-11 22:45 | 196, 197, 198 | 7d | 0.12d | start no earlier than 2019-01-11 08:00 | 陈安侍 [40%]; 陈俊杉 [15%]; 陈维 [15%]; 严翔宇 [15%]; 杨溢 [15%] | 1h | 里程碑ppt与相关文件 | 修改要求 |
| 200 | 1.9.5 | 第十六次小组会议 | 1h | 2019-01-12 10:30 | 2019-01-12 11:30 | 199 | 6.88d | 0d | start no earlier than 2019-01-12 08:00 | 陈安侍 [15%]; 陈俊杉 [15%]; 陈维 [15%]; 严翔宇 [15%]; 杨溢 [40%] | 1h | 项目进度，计划任务 | 会议记录，团队绩效评价 |
| 201 | 1.10 | **项目收尾** | 6.88d | 2019-01-12 11:30 | 2019-01-21 21:01 |  | 1d |  |  |  | 47h |  |  |
| 202 | 1.10.1 | 项目总结报告 | 3h | 2019-01-12 11:30 | 2019-01-13 11:30 | 200 | 7.5d |  |  | 陈安侍 [40%]; 陈俊杉 [15%]; 陈维 [15%]; 严翔宇 [15%]; 杨溢 [15%] | 3h | 所有相关文档，组员总结与教训 | 项目总结报告 |
| 203 | 1.10.2 | SRS主要文档检查 | 3h | 2019-01-13 10:30 | 2019-01-13 20:30 | 200 | 7.25d |  | start no earlier than 2019-01-13 08:00 | 陈维 | 3h | SRS主要文档 | SRS文档确认 |
| 204 | 1.10.3 | 项目章程检查 | 3h | 2019-01-13 10:30 | 2019-01-13 20:30 | 200 | 7.25d |  | start no earlier than 2019-01-13 08:00 | 陈俊杉 | 3h | 项目章程 | 项目章程确认 |
| 205 | 1.10.4 | SRS辅助检查 | 3h | 2019-01-13 10:30 | 2019-01-13 20:30 | 200 | 7.25d |  | start no earlier than 2019-01-13 08:00 | 杨溢 | 3h | SRS文档内容 | SRS文档内容确认 |
| 206 | 1.10.5 | 可行性分析报告检查 | 3h | 2019-01-13 10:30 | 2019-01-13 20:30 | 200 | 7.25d |  | start no earlier than 2019-01-13 08:00 | 严翔宇 | 3h | 可行性分析报告 | 可行性分析报告确认 |
| 207 | 1.10.6 | 需求变更文档检查 | 3h | 2019-01-13 10:30 | 2019-01-13 20:30 | 200 | 7.25d |  | start no earlier than 2019-01-13 08:00 | 严翔宇 | 3h | 需求变更文档 | 需求变更文档确认 |
| 208 | 1.10.7 | 最终评审ppt | 3h | 2019-01-14 10:30 | 2019-01-14 20:30 | 200 | 6.88d |  | start no earlier than 2019-01-14 08:00 | 陈安侍 [40%]; 陈俊杉 [15%]; 陈维 [15%]; 严翔宇 [15%]; 杨溢 [15%] | 3h | 评审表，需求文档 | 里程碑评审PPT |
| 209 | 1.10.8 | 组内评审最终 | 2h | 2019-01-14 10:30 | 2019-01-14 19:30 | 200 | 7d |  | start no earlier than 2019-01-14 08:00 | 陈安侍 [40%]; 陈俊杉 [15%]; 陈维 [15%]; 严翔宇 [15%]; 杨溢 [15%] | 2h | 里程碑ppt与相关文件 | 评审结果 |
| 210 | 1.10.9 | 第十七次小组会议 | 1h | 2019-01-14 10:30 | 2019-01-14 11:30 | 200 | 6.25d | 0d | start no earlier than 2019-01-14 08:00 | 陈安侍 [15%]; 陈俊杉 [15%]; 陈维 [15%]; 严翔宇 [15%]; 杨溢 [40%] | 1h | 项目进度，计划任务 | 会议记录，团队绩效评价 |
| 211 | 1.10.10 | 收尾 | 2h | 2019-01-14 11:30 | 2019-01-14 20:30 | 210 | 6.25d | 0.38d |  | 陈安侍 [40%]; 陈俊杉 [15%]; 陈维 [15%]; 严翔宇 [15%]; 杨溢 [15%] | 2h | 里程碑ppt与相关文件 | 文件检查 |
| 212 | 1.10.11 | 最终评审 | 1h | 2019-01-16 08:00 | 2019-01-16 09:00 | 211 | 5.88d | 4.88d | start no earlier than 2019-01-16 08:00 | 陈安侍 [40%]; 陈俊杉 [15%]; 陈维 [15%]; 严翔宇 [15%]; 杨溢 [15%] | 1h | 里程碑ppt与相关文件 | 总结报告 |
| 213 | 1.10.12 | 散伙饭 | 4h | 2019-01-21 17:00 | 2019-01-21 21:01 | 212 | 1d |  | start no earlier than 2019-01-21 08:00 | 陈安侍; 陈俊杉; 陈维; 严翔宇; 杨溢 | 20h | 资金 | 道别 |

| ID | WBS | Task | Type | Duration | Start | Finish |
| --- | --- | --- | --- | --- | --- | --- |
| 214 | 1.11 | **编码** |  | 3.81d | 2018-09-20 08:00 | 2018-10-05 17:00 |
| 215 | 1.11.1 | 前段编码 | manual | 1d | 2018-09-20 08:00 | 2018-09-20 16:00 |
| 216 | 1.11.2 | 后端编码 | manual | 1d? | 2018-09-20 08:00 | 2018-09-20 16:00 |
| 217 | 1.11.3 | 文档编写 | manual | 1d? | 2018-09-20 08:00 | 2018-09-20 16:00 |
| 218 | 1.12 | **测试** |  | 2.81d | 2018-09-20 08:00 | 2018-09-23 17:00 |
| 219 | 1.12.1 | 单元测试 | manual | 1d | 2018-09-20 08:00 | 2018-09-20 16:00 |
| 220 | 1.12.2 | 集成测试 | manual | 1d? | 2018-09-20 08:00 | 2018-09-20 16:00 |
| 221 | 1.12.3 | 系统测试 | manual | 1d? | 2018-09-20 08:00 | 2018-09-20 16:00 |
| 222 | 1.13 | 软件维护 | manual | 1d? | 2018-09-20 08:00 | 2018-09-20 16:00 |
